How a schedule from OmniPlan changed from version to version. A marks actual dates.

## Version 1 (saved 2017-06-05)

Note of the change: init

| ID | WBS | Task | Predecessors | Constraint |
| --- | --- | --- | --- | --- |
| 1 | 1 | **前端开发－橘云多租户管理平台** |  | start no earlier than 2017-06-01 |
| 2 | 1.1 | **单点登录功能开发** |  | start no earlier than 2017-05-25 |
| 3 |  | 调用中信云用户中心登录认证接口 |  | start no earlier than 2017-05-26 |
| 4 |  | 信云智控制台跳转到统一管控界面 | 3 | start no earlier than 2017-05-26 |
| 5 |  | 橘云多租户管理从统一管控平台无密码登录 | 4 | start no earlier than 2017-05-26 |
| 6 |  | 橘云Ambari运维平台从统一管控页面无密码登录 | 5 | start no earlier than 2017-05-26 |
| 7 | 1.2 | **租户管理页面框架开发** |  | start no earlier than 2017-05-25 |
| 8 |  | 租户管理页面顶级导航栏功能开发 |  | start no earlier than 2017-05-26 |
| 9 |  | 租户管理页面前端开发框架准备 | 8 | start no earlier than 2017-05-26 |
| 10 |  | 登录页面开发 | 9 | start no earlier than 2017-05-26 |
| 11 |  | 与单点登录服务的集成 | 10 | start no earlier than 2017-05-26 |
| 12 | 1.3 | **统一管控平台开发** |  | start no earlier than 2017-05-25 |
| 13 |  | 统一管控平台页面设计 |  | start no earlier than 2017-05-26 |
| 14 |  | 统一管控平台页面开发 | 13 | start no earlier than 2017-05-26 |
| 15 |  | 多租户平台管理页面接入 | 14 | start no earlier than 2017-05-26 |
| 16 |  | 运维管理平台页面接入 | 15 | start no earlier than 2017-05-26 |
| 17 |  | 第三方服务运维平台梳理 | 16 | start no earlier than 2017-05-26 |
| 18 |  | 第三方服务运维平台接入 | 17 | start no earlier than 2017-05-26 |
| 19 | 1.4 | **租户资源使用情况监控页面开发** | 2 | start no earlier than 2017-05-25 |
| 20 |  | 租户级的HDFS资源使用信息获取 |  | start no earlier than 2017-05-26 |
| 21 |  | 租户级的YARN资源使用信息获取 | 20 | start no earlier than 2017-05-26 |
| 22 |  | 租户级的Hive资源使用信息获取 | 21 | start no earlier than 2017-05-26 |
| 23 |  | 租户级的HBase资源使用信息获取 | 22 | start no earlier than 2017-05-26 |
| 24 |  | 租户级的Kafka资源使用信息获取 | 23 | start no earlier than 2017-05-26 |
| 25 |  | 租户级的Oracle资源使用信息获取 | 24 | start no earlier than 2017-05-26 |
| 26 |  | 租户级的GreenPlum 资源使用信息获取 | 25 | start no earlier than 2017-05-26 |
| 27 |  | 租户级的MongoDB资源使用信息获取 | 26 | start no earlier than 2017-05-26 |
| 28 |  | 租户级的Neo4j资源使用信息获取 | 27 | start no earlier than 2017-05-26 |
| 29 |  | 租户级的RabbitMQ资源使用信息获取 | 28 | start no earlier than 2017-05-26 |
| 30 | 1.5 | **租户角色管理，分配页面开发** |  | start no earlier than 2017-05-25 |
| 31 |  | 租户用户列表页面开发 |  | start no earlier than 2017-05-26 |
| 32 |  | 租户授权页面开发 | 31 | start no earlier than 2017-05-26 |
| 33 |  | 租户授权时获取云用户中心用户列表功能开发 | 32 | start no earlier than 2017-05-26 |
| 34 | 1.6 | **租户基本信息页面开发** | 12 | start no earlier than 2017-05-25 |
| 35 |  | 租户基本信息展示 |  | start no earlier than 2017-05-26 |
| 36 |  | 租户包涵的服务展示 | 35 | start no earlier than 2017-05-26 |
| 37 | 1.7 | **服务管理页面开发** |  | start no earlier than 2017-05-25 |
| 38 |  | 服务列表页面开发 |  | start no earlier than 2017-05-26 |
| 39 |  | 服务列表页面与后端集成 | 38 | start no earlier than 2017-05-26 |
| 40 |  | 服务添加页面框架开发 | 39 | start no earlier than 2017-05-26 |
| 41 |  | HDFS服务添加页面增强 | 40 | start no earlier than 2017-05-26 |
| 42 |  | YARN服务添加页面增强 | 41 | start no earlier than 2017-05-26 |
| 43 |  | Hive服务添加页面增强 | 42 | start no earlier than 2017-05-26 |
| 44 |  | HBase服务添加页面增强 | 43 | start no earlier than 2017-05-26 |
| 45 |  | Kafka服务添加页面增强 | 44 | start no earlier than 2017-05-26 |
| 46 |  | Oracle服务添加页面增强 | 45 | start no earlier than 2017-05-26 |
| 47 |  | GreenPlum服务添加页面增强 | 46 | start no earlier than 2017-05-26 |
| 48 |  | MongoDB服务添加页面增强 | 47 | start no earlier than 2017-05-26 |
| 49 |  | Neo4j服务添加页面增强 | 48 | start no earlier than 2017-05-26 |
| 50 |  | RabbitMQ服务添加页面增强 | 49 | start no earlier than 2017-05-26 |
| 51 | 1.8 | **角色管理页面开发** | 37 | start no earlier than 2017-05-25 |
| 52 |  | 角色列表页面开发 |  | start no earlier than 2017-05-26 |
| 53 |  | 角色列表获取API调用 | 52 | start no earlier than 2017-05-26 |
| 54 | 2 | **服务端开发－橘云多租户管理平台** |  | start no earlier than 2017-06-01 |
| 55 | 2.1 | **服务管理功能开发** |  | start no earlier than 2017-05-25 |
| 56 |  | 服务和服务实例接口定义 |  | start no earlier than 2017-05-26 |
| 57 |  | 服务和服务实例接口开发 | 56 | start no earlier than 2017-05-26 |
| 58 |  | 服务管理功能开发 | 57 | start no earlier than 2017-05-26 |
| 59 |  | 服务实例管理功能开发 | 58 | start no earlier than 2017-05-26 |
| 60 | 2.2 | **权限管理功能开发** |  | start no earlier than 2017-05-25 |
| 61 |  | 三种角色控制框架设计 |  | start no earlier than 2017-05-26 |
| 62 |  | 系统管理员权限控制功能开发 | 61 | start no earlier than 2017-05-26 |
| 63 |  | 项目管理员权限控制功能开发 | 62 | start no earlier than 2017-05-26 |
| 64 |  | 普通用户权限控制功能开发 | 63 | start no earlier than 2017-05-26 |
| 65 | 2.3 | **租户管理功能开发** |  | start no earlier than 2017-05-25 |
| 66 |  | 租户接口设计 |  | start no earlier than 2017-05-26 |
| 67 |  | 租户接口实现 | 66 | start no earlier than 2017-05-26 |
| 68 |  | 租户查询 | 67 | start no earlier than 2017-05-26 |
| 69 |  | 租户创建 | 68 | start no earlier than 2017-05-26 |
| 70 |  | 租户修改 | 69 | start no earlier than 2017-05-26 |

| ID | WBS | Task | Predecessors | Constraint |
| --- | --- | --- | --- | --- |
| 71 | 2.4 | **服务端配置管理，框架开发** | 7 | start no earlier than 2017-05-25 |
| 72 |  | 服务端Web服务器准备 |  | start no earlier than 2017-05-26 |
| 73 |  | 服务端开发框架准备 | 72 | start no earlier than 2017-05-26 |
| 74 |  | 服务端代码组织结构设计 | 73 | start no earlier than 2017-05-26 |
| 75 | 3 | **服务适配器开发** |  |  |
| 76 | 3.1 | **HDFS服务及服务实例开发** |  | start no earlier than 2017-06-01 |
| 77 |  | HDFS服务功能开发 |  | start no earlier than 2017-05-26 |
| 78 |  | HDFS服务实例功能开发 | 77 | start no earlier than 2017-05-26 |
| 79 |  | HDFS服务REST API实现 | 78 | start no earlier than 2017-05-26 |
| 80 | 3.2 | **YARN服务及服务实例开发** | 76 | start no earlier than 2017-06-01 |
| 81 |  | YARN服务功能开发 |  | start no earlier than 2017-05-26 |
| 82 |  | YARN服务实例功能开发 | 81 | start no earlier than 2017-05-26 |
| 83 |  | YARN服务REST API实现 | 82 | start no earlier than 2017-05-26 |
| 84 | 3.3 | **HBase服务及服务实例开发** |  | start no earlier than 2017-06-01 |
| 85 |  | HBase服务功能开发 |  | start no earlier than 2017-05-26 |
| 86 |  | HBase服务实例功能开发 | 85 | start no earlier than 2017-05-26 |
| 87 |  | HBase服务REST API开发 | 86 | start no earlier than 2017-05-26 |
| 88 | 3.4 | **Hive服务及服务实例开发** | 84 | start no earlier than 2017-06-01 |
| 89 |  | Hive服务功能开发 |  | start no earlier than 2017-05-26 |
| 90 |  | Hive服务实例功能开发 | 89 | start no earlier than 2017-05-26 |
| 91 |  | Hive服务REST API实现 | 90 | start no earlier than 2017-05-26 |
| 92 | 3.5 | **Kafka服务及服务实例开发** | 55 | start no earlier than 2017-06-01 |
| 93 |  | Kafka服务功能开发 |  | start no earlier than 2017-05-26 |
| 94 |  | Kafka服务实例功能开发 | 93 | start no earlier than 2017-05-26 |
| 95 |  | Kafka服务REST API实现 | 94 | start no earlier than 2017-05-26 |
| 96 | 3.6 | **Oracle服务及服务实例开发** |  | start no earlier than 2017-06-01 |
| 97 |  | Oracle服务功能调研 |  | start no earlier than 2017-05-26 |
| 98 |  | Oracle服务实例功能调研 | 97 | start no earlier than 2017-05-26 |
| 99 |  | Oracle服务功能开发 | 98 | start no earlier than 2017-05-26 |
| 100 |  | Oracle服务实例功能开发 | 99 | start no earlier than 2017-05-26 |
| 101 |  | Oracle服务REST API实现 | 100 | start no earlier than 2017-05-26 |
| 102 |  | Oracle服务功能集成 | 101 | start no earlier than 2017-05-26 |
| 103 | 3.7 | **GreenPlum 服务及服务实例开发** |  | start no earlier than 2017-06-01 |
| 104 |  | GreenPlum服务功能调研 |  | start no earlier than 2017-05-26 |
| 105 |  | GreenPlum 服务实例功能调研 | 104 | start no earlier than 2017-05-26 |
| 106 |  | GreenPlum服务功能开发 | 105 | start no earlier than 2017-05-26 |
| 107 |  | GreenPlum 服务实例功能开发 | 106 | start no earlier than 2017-05-26 |
| 108 |  | GreenPlum 服务REST API实现 | 107 | start no earlier than 2017-05-26 |
| 109 |  | GreenPlum服务功能集成 | 108 | start no earlier than 2017-05-26 |
| 110 | 3.8 | **MongoDB服务及服务实例开发** |  | start no earlier than 2017-06-01 |
| 111 |  | MongoDB服务功能调研 |  | start no earlier than 2017-05-26 |
| 112 |  | MongoDB服务实例功能调研 | 111 | start no earlier than 2017-05-26 |
| 113 |  | MongoDB服务功能开发 | 112 | start no earlier than 2017-05-26 |
| 114 |  | MongoDB服务实例功能开发 | 113 | start no earlier than 2017-05-26 |
| 115 |  | MongoDB服务REST API实现 | 114 | start no earlier than 2017-05-26 |
| 116 |  | MongoDB服务功能集成 | 115 | start no earlier than 2017-05-26 |
| 117 | 3.9 | **Neo4j服务及服务实例开发** |  | start no earlier than 2017-06-01 |
| 118 |  | Neo4j服务功能调研 |  | start no earlier than 2017-05-26 |
| 119 |  | Neo4j服务实例功能调研 | 118 | start no earlier than 2017-05-26 |
| 120 |  | Neo4j服务功能开发 | 119 | start no earlier than 2017-05-26 |
| 121 |  | Neo4j服务实例功能开发 | 120 | start no earlier than 2017-05-26 |
| 122 |  | Neo4j服务REST API实现 | 121 | start no earlier than 2017-05-26 |
| 123 |  | Neo4j服务功能集成 | 122 | start no earlier than 2017-05-26 |
| 124 | 3.10 | **RabbitMQ服务及服务实例开发** |  | start no earlier than 2017-06-01 |
| 125 |  | RabbitMQ服务功能调研 |  | start no earlier than 2017-05-26 |
| 126 |  | RabbitMQ服务实例功能调研 | 125 | start no earlier than 2017-05-26 |
| 127 |  | RabbitMQ服务功能开发 | 126 | start no earlier than 2017-05-26 |
| 128 |  | RabbitMQ服务实例功能开发 | 127 | start no earlier than 2017-05-26 |
| 129 |  | RabbitMQ服务RSET API实现 | 128 | start no earlier than 2017-05-26 |
| 130 |  | RabbitMQ服务功能集成 | 129 | start no earlier than 2017-05-26 |
| 131 | 4 | **与DACP调用接口开发** |  | start no earlier than 2017-06-01 |
| 132 |  | 与DACP调用接口沟通 |  | start no earlier than 2017-05-26 |
| 133 |  | DACP接口调用 | 132 | start no earlier than 2017-05-26 |
| 134 | 5 | **与信云智交互过程开发** |  | start no earlier than 2017-06-01 |
| 135 | 5.1 | **提供REST API供信云智调用来获取服务列表** |  | start no earlier than 2017-05-25 |
| 136 |  | REST API接口设计 |  | start no earlier than 2017-05-26 |
| 137 |  | REST API实现 | 136 | start no earlier than 2017-05-26 |
| 138 | 5.2 | **提供REST API供信云智创建租户** | 135 | start no earlier than 2017-05-25 |
| 139 |  | REST API接口设计 |  | start no earlier than 2017-05-26 |
| 140 |  | REST API实现 | 139 | start no earlier than 2017-05-26 |

| ID | WBS | Task | Predecessors | Constraint |
| --- | --- | --- | --- | --- |
| 141 | 5.3 | **提供REST API供信云智查询租户** | 138 | start no earlier than 2017-05-26 |
| 142 |  | REST API接口设计 |  | start no earlier than 2017-05-26 |
| 143 |  | REST API实现 | 142 | start no earlier than 2017-05-26 |
| 144 | 5.4 | **提供REST API供信云智修改租户** | 131, 141 | start no earlier than 2017-05-25 |
| 145 |  | REST API接口设计 |  | start no earlier than 2017-05-26 |
| 146 |  | REST API实现 | 145 | start no earlier than 2017-05-26 |

## Version 2 (saved 2017-06-07)

Note of the change: update Web UX prototype, FS and plan.

Added:

| ID | Task | Predecessors | Constraint |
| --- | --- | --- | --- |
| 147 | **需求变更任务** |  | start no earlier than 2017-06-06 |
| 148 | **中信云访问资源报告页面** |  | start no earlier than 2017-06-06 |
| 149 | 资源报告页面可定制化，根据服务实例ID来动态展示 |  | start no earlier than 2017-06-07 |
| 150 | 中信云中嵌入资源报告页面 | 149 | start no earlier than 2017-06-07 |
| 151 | **用户授权完成发邮件** | 148 | start no earlier than 2017-06-06 |
| 152 | 配置邮件服务器信息，后台配置 |  | start no earlier than 2017-06-07 |
| 153 | 发送邮件功能开发，启动一个线程后台运行 | 152 | start no earlier than 2017-06-07 |
| 154 | 授权完成触发邮件发送 | 153 | start no earlier than 2017-06-07 |
| 155 | 子公司用户权限控制 | 151 | start no earlier than 2017-06-06 |
| 156 | 子公司资源报告 | 155 | start no earlier than 2017-06-07 |
| 157 | 集团资源报告 | 156 | start no earlier than 2017-06-07 |
| 158 | **其它** |  | start no earlier than 2017-06-07 |
| 159 | **需求分析** |  | start no earlier than 2017-06-07 |
| 160 | 客户需求理解，前期准备 |  | start no earlier than 2017-06-07 |
| 161 | 需求讨论，分析 |  | start no earlier than 2017-06-07 |
| 162 | **架构设计** |  | start no earlier than 2017-06-07 |
| 163 | 租户模型设计 |  | start no earlier than 2017-06-07 |
| 164 | 架构设计 |  | start no earlier than 2017-06-07 |
| 165 | 前端页面原型开发 |  | start no earlier than 2017-06-07 |
| 166 | 实现方案论证 |  | start no earlier than 2017-06-07 |
| 167 | 工作计划编写 |  | start no earlier than 2017-06-07 |
| 168 | 项目沟通协调 |  | start no earlier than 2017-06-07 |

Changed:

| ID | Task | Other |
| --- | --- | --- |
| 61 | 四种角色控制框架设计 | was named 三种角色控制框架设计 |

## Version 3 (saved 2017-06-11)

Note of the change: update prototype, FS and scheduler.

Added:

| ID | Task | Predecessors | Constraint | Resources |
| --- | --- | --- | --- | --- |
| 71 | 租户删除 |  | start no earlier than 2017-06-07 |  |
| 150 | 用户列表页面 |  | start no earlier than 2017-06-07 |  |
| 151 | 用户添加 | 150 | start no earlier than 2017-06-07 |  |
| 172 | Service Broker重构 |  | start no earlier than 2017-06-08 | 柴宗三 |
| 173 | **资源监控数据收集框架开发** |  | start no earlier than 2017-06-09 |  |
| 174 | HDFS按实例收集资源使用信息 |  | start no earlier than 2017-06-09 | 现场研发3？ |
| 175 | YARN按实例收集资源使用信息 | 174 | start no earlier than 2017-06-09 | 现场研发3？ |
| 176 | HBase按实例收集资源使用信息 | 175 | start no earlier than 2017-06-09 | 现场研发3？ |
| 177 | HIve按实例收集资源使用信息 | 176 | start no earlier than 2017-06-09 | 现场研发3？ |
| 178 | Kafka按实例收集资源使用信息 | 177 | start no earlier than 2017-06-09 | 现场研发3？ |
| 179 | GreenPlum按实例收集资源使用信息 |  | start no earlier than 2017-06-09 | 现场研发4？ |
| 180 | MongoDB按实例收集资源使用信息 | 179 | start no earlier than 2017-06-09 | 现场研发4？ |
| 181 | Neo4j按实例收集资源使用信息 |  | start no earlier than 2017-06-09 | 现场研发5？ |
| 182 | RabbitMQ按实例收集资源使用信息 | 181 | start no earlier than 2017-06-09 | 现场研发5？ |
| 183 | 按实例获取资源使用信息REST API | 182 | start no earlier than 2017-06-09 | 现场研发5？ |

Changed:

| ID | Task | Predecessors | Other |
| --- | --- | --- | --- |
| 10 | 初始化一个系统管理员用户 |  | was named 登录页面开发 |
| 46 | Oracle服务添加页面增强 |  | resources 贾双喜 → none |
| 61 | 四种角色控制框架设计 |  | resources 现场研发2 → 虞里杉 |
| 62 | 系统管理员权限控制功能开发 |  | resources 现场研发2 → 虞里杉 |
| 63 | 项目管理员权限控制功能开发 |  | resources 现场研发2 → 虞里杉 |
| 64 | 普通用户权限控制功能开发 |  | resources 现场研发2 → 虞里杉 |
| 98 | Oracle服务功能调研 |  | resources 现场研发1 → none |
| 99 | Oracle服务实例功能调研 |  | resources 现场研发1 → none |
| 100 | Oracle服务功能开发 |  | resources 现场研发1 → none |
| 101 | Oracle服务实例功能开发 |  | resources 现场研发1 → none |
| 102 | Oracle服务REST API实现 |  | resources 现场研发1 → none |
| 103 | Oracle服务功能集成 |  | resources 现场研发1 → none |
| 105 | GreenPlum服务功能调研 |  | resources 袁伟明 → ？？ |
| 106 | GreenPlum 服务实例功能调研 |  | resources 袁伟明 → ？？ |
| 107 | GreenPlum服务功能开发 |  | resources 袁伟明 → ？？ |
| 108 | GreenPlum 服务实例功能开发 |  | resources 袁伟明 → ？？ |
| 109 | GreenPlum 服务REST API实现 |  | resources 袁伟明 → ？？ |
| 110 | GreenPlum服务功能集成 |  | resources 袁伟明 → ？？ |
| 112 | MongoDB服务功能调研 |  | resources 柴宗三 → ？？ |
| 113 | MongoDB服务实例功能调研 |  | resources 柴宗三 → ？？ |
| 114 | MongoDB服务功能开发 |  | resources 柴宗三 → ？？ |
| 115 | MongoDB服务实例功能开发 |  | resources 柴宗三 → ？？ |
| 116 | MongoDB服务REST API实现 |  | resources 柴宗三 → ？？ |
| 117 | MongoDB服务功能集成 |  | resources 柴宗三 → ？？ |
| 119 | Neo4j服务功能调研 |  | resources 刘旭 → 袁伟明 |
| 120 | Neo4j服务实例功能调研 |  | resources 刘旭 → 袁伟明 |
| 121 | Neo4j服务功能开发 |  | resources 刘旭 → 袁伟明 |
| 122 | Neo4j服务实例功能开发 |  | resources 刘旭 → 袁伟明 |
| 123 | Neo4j服务REST API实现 |  | resources 刘旭 → 袁伟明 |
| 124 | Neo4j服务功能集成 |  | resources 刘旭 → 袁伟明 |
| 126 | RabbitMQ服务功能调研 |  | resources 柴宗三 → 刘旭 |
| 127 | RabbitMQ服务实例功能调研 |  | resources 柴宗三 → 刘旭 |
| 128 | RabbitMQ服务功能开发 |  | resources 柴宗三 → 刘旭 |
| 129 | RabbitMQ服务实例功能开发 |  | resources 柴宗三 → 刘旭 |
| 130 | RabbitMQ服务RSET API实现 |  | resources 柴宗三 → 刘旭 |
| 131 | RabbitMQ服务功能集成 |  | resources 柴宗三 → 刘旭 |
| 133 | 与DACP调用接口沟通 |  | resources 现场研发3 → 现场研发2？ |
| 134 | DACP接口调用 |  | resources 现场研发3 → 现场研发2？ |
| 137 | REST API接口设计 |  | resources 现场研发4 → 赵一鸣 |
| 138 | REST API实现 |  | resources 现场研发4 → 赵一鸣 |
| 140 | REST API接口设计 |  | resources 现场研发4 → 赵一鸣 |
| 141 | REST API实现 |  | resources 现场研发4 → 赵一鸣 |
| 143 | REST API接口设计 |  | resources 现场研发4 → 赵一鸣 |
| 144 | REST API实现 |  | resources 现场研发4 → 赵一鸣 |
| 146 | REST API接口设计 |  | resources 现场研发4 → 赵一鸣 |
| 147 | REST API实现 |  | resources 现场研发4 → 赵一鸣 |
| 149 | 子公司用户权限控制 | 157 → none | constraint start no earlier than 2017-06-06 → start no earlier than 2017-06-07 |
| 152 | 子公司资源报告 | 149 → 151 |  |
| 158 | 配置邮件服务器信息，后台配置 |  | resources none → 现场研发1？ |
| 159 | 发送邮件功能开发，启动一个线程后台运行 |  | resources none → 现场研发1？ |
| 160 | 授权完成触发邮件发送 |  | resources none → 现场研发1？ |
| 163 | 客户需求理解，前期准备 |  | resources none → 王栋 |
| 164 | 需求讨论，分析 |  | resources none → 王栋 |
| 166 | 租户模型设计 |  | resources none → 王栋 |
| 167 | 架构设计 |  | resources none → 王栋 |
| 168 | 前端页面原型开发 |  | resources none → 王栋 |
| 169 | 实现方案论证 |  | resources none → 王栋 |
| 170 | 工作计划编写 |  | resources none → 王栋 |
| 171 | 项目沟通协调 |  | resources none → 王栋 |

## Version 4 (saved 2017-06-12)

Note of the change: Update scheduler, identify the BIU developers' tasks. Set Zongsan as the MongoDB service broker enhancement owner.

Changed:

| ID | Task | Other |
| --- | --- | --- |
| 112 | MongoDB服务功能调研 | resources ？？ → 柴宗三 |
| 113 | MongoDB服务实例功能调研 | resources ？？ → 柴宗三 |
| 114 | MongoDB服务功能开发 | resources ？？ → 柴宗三 |
| 115 | MongoDB服务实例功能开发 | resources ？？ → 柴宗三 |
| 116 | MongoDB服务REST API实现 | resources ？？ → 柴宗三 |
| 117 | MongoDB服务功能集成 | resources ？？ → 柴宗三 |
| 133 | 与DACP调用接口沟通 | resources 现场研发2？ → 于晶 |
| 134 | DACP接口调用 | resources 现场研发2？ → 于晶 |
| 158 | 配置邮件服务器信息，后台配置 | resources 现场研发1？ → 罗丹丹 |
| 159 | 发送邮件功能开发，启动一个线程后台运行 | resources 现场研发1？ → 罗丹丹 |
| 160 | 授权完成触发邮件发送 | resources 现场研发1？ → 罗丹丹 |
| 174 | HDFS按实例收集资源使用信息 | resources 现场研发3？ → 张富强 |
| 175 | YARN按实例收集资源使用信息 | resources 现场研发3？ → 张富强 |
| 176 | HBase按实例收集资源使用信息 | resources 现场研发3？ → 张富强 |
| 177 | HIve按实例收集资源使用信息 | resources 现场研发3？ → 赵星云 |
| 178 | Kafka按实例收集资源使用信息 | resources 现场研发3？ → 闫林生 |
| 179 | GreenPlum按实例收集资源使用信息 | resources 现场研发4？ → 闫林生 |
| 180 | MongoDB按实例收集资源使用信息 | resources 现场研发4？ → 闫林生 |
| 181 | Neo4j按实例收集资源使用信息 | resources 现场研发5？ → 赵星云 |
| 182 | RabbitMQ按实例收集资源使用信息 | resources 现场研发5？ → 赵星云 |
| 183 | 按实例获取资源使用信息REST API | resources 现场研发5？ → 赵星云 |

## Version 5 (saved 2017-06-13)

Note of the change: update scheduler, assign ZongSan as the MongoDB Service Broker server an WeiMing as the GreenPlum Service Broker owner.

Changed:

| ID | Task | Other |
| --- | --- | --- |
| 105 | GreenPlum服务功能调研 | resources ？？ → 袁伟明 |
| 106 | GreenPlum 服务实例功能调研 | resources ？？ → 袁伟明 |
| 107 | GreenPlum服务功能开发 | resources ？？ → 袁伟明 |
| 108 | GreenPlum 服务实例功能开发 | resources ？？ → 袁伟明 |
| 109 | GreenPlum 服务REST API实现 | resources ？？ → 袁伟明 |
| 110 | GreenPlum服务功能集成 | resources ？？ → 袁伟明 |
