How a schedule from MS Project XML changed from version to version. A marks actual dates.

## Version 1 (saved 2017-06-05)

Note of the change: init

| ID | WBS | Task | Duration | Start | Finish | Predecessors | Constraint |
| --- | --- | --- | --- | --- | --- | --- | --- |
| 1 | 1 | **前端开发－橘云多租户管理平台** | 22d | 2017-06-01 | 2017-06-30 |  | start no earlier than 2017-06-01 |
| 2 | 1.1 | **单点登录功能开发** | 7d | 2017-06-01 | 2017-06-09 |  | start no earlier than 2017-05-25 |
| 3 |  | 调用中信云用户中心登录认证接口 | 2d | 2017-06-01 | 2017-06-02 |  | start no earlier than 2017-05-26 |
| 4 |  | 信云智控制台跳转到统一管控界面 | 1d | 2017-06-05 | 2017-06-05 | 3 | start no earlier than 2017-05-26 |
| 5 |  | 橘云多租户管理从统一管控平台无密码登录 | 2d | 2017-06-06 | 2017-06-07 | 4 | start no earlier than 2017-05-26 |
| 6 |  | 橘云Ambari运维平台从统一管控页面无密码登录 | 2d | 2017-06-08 | 2017-06-09 | 5 | start no earlier than 2017-05-26 |
| 7 | 1.2 | **租户管理页面框架开发** | 10d | 2017-06-01 | 2017-06-14 |  | start no earlier than 2017-05-25 |
| 8 |  | 租户管理页面顶级导航栏功能开发 | 4d | 2017-06-01 | 2017-06-06 |  | start no earlier than 2017-05-26 |
| 9 |  | 租户管理页面前端开发框架准备 | 2d | 2017-06-07 | 2017-06-08 | 8 | start no earlier than 2017-05-26 |
| 10 |  | 登录页面开发 | 3d | 2017-06-09 | 2017-06-13 | 9 | start no earlier than 2017-05-26 |
| 11 |  | 与单点登录服务的集成 | 1d | 2017-06-14 | 2017-06-14 | 10 | start no earlier than 2017-05-26 |
| 12 | 1.3 | **统一管控平台开发** | 15d | 2017-06-01 | 2017-06-21 |  | start no earlier than 2017-05-25 |
| 13 |  | 统一管控平台页面设计 | 3d | 2017-06-01 | 2017-06-05 |  | start no earlier than 2017-05-26 |
| 14 |  | 统一管控平台页面开发 | 4d | 2017-06-06 | 2017-06-09 | 13 | start no earlier than 2017-05-26 |
| 15 |  | 多租户平台管理页面接入 | 2d | 2017-06-12 | 2017-06-13 | 14 | start no earlier than 2017-05-26 |
| 16 |  | 运维管理平台页面接入 | 1d | 2017-06-14 | 2017-06-14 | 15 | start no earlier than 2017-05-26 |
| 17 |  | 第三方服务运维平台梳理 | 2d | 2017-06-15 | 2017-06-16 | 16 | start no earlier than 2017-05-26 |
| 18 |  | 第三方服务运维平台接入 | 3d | 2017-06-19 | 2017-06-21 | 17 | start no earlier than 2017-05-26 |
| 19 | 1.4 | **租户资源使用情况监控页面开发** | 15d | 2017-06-12 | 2017-06-30 | 2 | start no earlier than 2017-05-25 |
| 20 |  | 租户级的HDFS资源使用信息获取 | 2d | 2017-06-12 | 2017-06-13 |  | start no earlier than 2017-05-26 |
| 21 |  | 租户级的YARN资源使用信息获取 | 1d | 2017-06-14 | 2017-06-14 | 20 | start no earlier than 2017-05-26 |
| 22 |  | 租户级的Hive资源使用信息获取 | 2d | 2017-06-15 | 2017-06-16 | 21 | start no earlier than 2017-05-26 |
| 23 |  | 租户级的HBase资源使用信息获取 | 1d | 2017-06-19 | 2017-06-19 | 22 | start no earlier than 2017-05-26 |
| 24 |  | 租户级的Kafka资源使用信息获取 | 2d | 2017-06-20 | 2017-06-21 | 23 | start no earlier than 2017-05-26 |
| 25 |  | 租户级的Oracle资源使用信息获取 | 1d | 2017-06-22 | 2017-06-22 | 24 | start no earlier than 2017-05-26 |
| 26 |  | 租户级的GreenPlum 资源使用信息获取 | 2d | 2017-06-23 | 2017-06-26 | 25 | start no earlier than 2017-05-26 |
| 27 |  | 租户级的MongoDB资源使用信息获取 | 1d | 2017-06-27 | 2017-06-27 | 26 | start no earlier than 2017-05-26 |
| 28 |  | 租户级的Neo4j资源使用信息获取 | 2d | 2017-06-28 | 2017-06-29 | 27 | start no earlier than 2017-05-26 |
| 29 |  | 租户级的RabbitMQ资源使用信息获取 | 1d | 2017-06-30 | 2017-06-30 | 28 | start no earlier than 2017-05-26 |
| 30 | 1.5 | **租户角色管理，分配页面开发** | 10d | 2017-06-01 | 2017-06-14 |  | start no earlier than 2017-05-25 |
| 31 |  | 租户用户列表页面开发 | 4d | 2017-06-01 | 2017-06-06 |  | start no earlier than 2017-05-26 |
| 32 |  | 租户授权页面开发 | 4d | 2017-06-07 | 2017-06-12 | 31 | start no earlier than 2017-05-26 |
| 33 |  | 租户授权时获取云用户中心用户列表功能开发 | 2d | 2017-06-13 | 2017-06-14 | 32 | start no earlier than 2017-05-26 |
| 34 | 1.6 | **租户基本信息页面开发** | 6d | 2017-06-22 | 2017-06-29 | 12 | start no earlier than 2017-05-25 |
| 35 |  | 租户基本信息展示 | 3d | 2017-06-22 | 2017-06-26 |  | start no earlier than 2017-05-26 |
| 36 |  | 租户包涵的服务展示 | 3d | 2017-06-27 | 2017-06-29 | 35 | start no earlier than 2017-05-26 |
| 37 | 1.7 | **服务管理页面开发** | 16d | 2017-06-01 | 2017-06-22 |  | start no earlier than 2017-05-25 |
| 38 |  | 服务列表页面开发 | 4d | 2017-06-01 | 2017-06-06 |  | start no earlier than 2017-05-26 |
| 39 |  | 服务列表页面与后端集成 | 1d | 2017-06-07 | 2017-06-07 | 38 | start no earlier than 2017-05-26 |
| 40 |  | 服务添加页面框架开发 | 1d | 2017-06-08 | 2017-06-08 | 39 | start no earlier than 2017-05-26 |
| 41 |  | HDFS服务添加页面增强 | 1d | 2017-06-09 | 2017-06-09 | 40 | start no earlier than 2017-05-26 |
| 42 |  | YARN服务添加页面增强 | 1d | 2017-06-12 | 2017-06-12 | 41 | start no earlier than 2017-05-26 |
| 43 |  | Hive服务添加页面增强 | 1d | 2017-06-13 | 2017-06-13 | 42 | start no earlier than 2017-05-26 |
| 44 |  | HBase服务添加页面增强 | 1d | 2017-06-14 | 2017-06-14 | 43 | start no earlier than 2017-05-26 |
| 45 |  | Kafka服务添加页面增强 | 1d | 2017-06-15 | 2017-06-15 | 44 | start no earlier than 2017-05-26 |
| 46 |  | Oracle服务添加页面增强 | 1d | 2017-06-16 | 2017-06-16 | 45 | start no earlier than 2017-05-26 |
| 47 |  | GreenPlum服务添加页面增强 | 1d | 2017-06-19 | 2017-06-19 | 46 | start no earlier than 2017-05-26 |
| 48 |  | MongoDB服务添加页面增强 | 1d | 2017-06-20 | 2017-06-20 | 47 | start no earlier than 2017-05-26 |
| 49 |  | Neo4j服务添加页面增强 | 1d | 2017-06-21 | 2017-06-21 | 48 | start no earlier than 2017-05-26 |
| 50 |  | RabbitMQ服务添加页面增强 | 1d | 2017-06-22 | 2017-06-22 | 49 | start no earlier than 2017-05-26 |
| 51 | 1.8 | **角色管理页面开发** | 5d | 2017-06-23 | 2017-06-29 | 37 | start no earlier than 2017-05-25 |
| 52 |  | 角色列表页面开发 | 3d | 2017-06-23 | 2017-06-27 |  | start no earlier than 2017-05-26 |
| 53 |  | 角色列表获取API调用 | 2d | 2017-06-28 | 2017-06-29 | 52 | start no earlier than 2017-05-26 |
| 54 | 2 | **服务端开发－橘云多租户管理平台** | 20d | 2017-06-01 | 2017-06-28 |  | start no earlier than 2017-06-01 |
| 55 | 2.1 | **服务管理功能开发** | 10d | 2017-06-01 | 2017-06-14 |  | start no earlier than 2017-05-25 |
| 56 |  | 服务和服务实例接口定义 | 2d | 2017-06-01 | 2017-06-02 |  | start no earlier than 2017-05-26 |
| 57 |  | 服务和服务实例接口开发 | 1d | 2017-06-05 | 2017-06-05 | 56 | start no earlier than 2017-05-26 |
| 58 |  | 服务管理功能开发 | 3d | 2017-06-06 | 2017-06-08 | 57 | start no earlier than 2017-05-26 |
| 59 |  | 服务实例管理功能开发 | 4d | 2017-06-09 | 2017-06-14 | 58 | start no earlier than 2017-05-26 |
| 60 | 2.2 | **权限管理功能开发** | 10d | 2017-06-01 | 2017-06-14 |  | start no earlier than 2017-05-25 |
| 61 |  | 三种角色控制框架设计 | 3d | 2017-06-01 | 2017-06-05 |  | start no earlier than 2017-05-26 |
| 62 |  | 系统管理员权限控制功能开发 | 3d | 2017-06-06 | 2017-06-08 | 61 | start no earlier than 2017-05-26 |
| 63 |  | 项目管理员权限控制功能开发 | 2d | 2017-06-09 | 2017-06-12 | 62 | start no earlier than 2017-05-26 |
| 64 |  | 普通用户权限控制功能开发 | 2d | 2017-06-13 | 2017-06-14 | 63 | start no earlier than 2017-05-26 |
| 65 | 2.3 | **租户管理功能开发** | 15d | 2017-06-01 | 2017-06-21 |  | start no earlier than 2017-05-25 |
| 66 |  | 租户接口设计 | 3d | 2017-06-01 | 2017-06-05 |  | start no earlier than 2017-05-26 |
| 67 |  | 租户接口实现 | 3d | 2017-06-06 | 2017-06-08 | 66 | start no earlier than 2017-05-26 |
| 68 |  | 租户查询 | 1d | 2017-06-09 | 2017-06-09 | 67 | start no earlier than 2017-05-26 |
| 69 |  | 租户创建 | 4d | 2017-06-12 | 2017-06-15 | 68 | start no earlier than 2017-05-26 |
| 70 |  | 租户修改 | 4d | 2017-06-16 | 2017-06-21 | 69 | start no earlier than 2017-05-26 |

| ID | WBS | Task | Duration | Start | Finish | Predecessors | Constraint |
| --- | --- | --- | --- | --- | --- | --- | --- |
| 71 | 2.4 | **服务端配置管理，框架开发** | 10d | 2017-06-15 | 2017-06-28 | 7 | start no earlier than 2017-05-25 |
| 72 |  | 服务端Web服务器准备 | 3d | 2017-06-15 | 2017-06-19 |  | start no earlier than 2017-05-26 |
| 73 |  | 服务端开发框架准备 | 4d | 2017-06-20 | 2017-06-23 | 72 | start no earlier than 2017-05-26 |
| 74 |  | 服务端代码组织结构设计 | 3d | 2017-06-26 | 2017-06-28 | 73 | start no earlier than 2017-05-26 |
| 75 | 3 | **服务适配器开发** | 20d | 2017-06-01 | 2017-06-28 |  |  |
| 76 | 3.1 | **HDFS服务及服务实例开发** | 10d | 2017-06-01 | 2017-06-14 |  | start no earlier than 2017-06-01 |
| 77 |  | HDFS服务功能开发 | 4d | 2017-06-01 | 2017-06-06 |  | start no earlier than 2017-05-26 |
| 78 |  | HDFS服务实例功能开发 | 4d | 2017-06-07 | 2017-06-12 | 77 | start no earlier than 2017-05-26 |
| 79 |  | HDFS服务REST API实现 | 2d | 2017-06-13 | 2017-06-14 | 78 | start no earlier than 2017-05-26 |
| 80 | 3.2 | **YARN服务及服务实例开发** | 10d | 2017-06-15 | 2017-06-28 | 76 | start no earlier than 2017-06-01 |
| 81 |  | YARN服务功能开发 | 4d | 2017-06-15 | 2017-06-20 |  | start no earlier than 2017-05-26 |
| 82 |  | YARN服务实例功能开发 | 4d | 2017-06-21 | 2017-06-26 | 81 | start no earlier than 2017-05-26 |
| 83 |  | YARN服务REST API实现 | 2d | 2017-06-27 | 2017-06-28 | 82 | start no earlier than 2017-05-26 |
| 84 | 3.3 | **HBase服务及服务实例开发** | 10d | 2017-06-01 | 2017-06-14 |  | start no earlier than 2017-06-01 |
| 85 |  | HBase服务功能开发 | 4d | 2017-06-01 | 2017-06-06 |  | start no earlier than 2017-05-26 |
| 86 |  | HBase服务实例功能开发 | 4d | 2017-06-07 | 2017-06-12 | 85 | start no earlier than 2017-05-26 |
| 87 |  | HBase服务REST API开发 | 2d | 2017-06-13 | 2017-06-14 | 86 | start no earlier than 2017-05-26 |
| 88 | 3.4 | **Hive服务及服务实例开发** | 10d | 2017-06-15 | 2017-06-28 | 84 | start no earlier than 2017-06-01 |
| 89 |  | Hive服务功能开发 | 4d | 2017-06-15 | 2017-06-20 |  | start no earlier than 2017-05-26 |
| 90 |  | Hive服务实例功能开发 | 4d | 2017-06-21 | 2017-06-26 | 89 | start no earlier than 2017-05-26 |
| 91 |  | Hive服务REST API实现 | 2d | 2017-06-27 | 2017-06-28 | 90 | start no earlier than 2017-05-26 |
| 92 | 3.5 | **Kafka服务及服务实例开发** | 10d | 2017-06-15 | 2017-06-28 | 55 | start no earlier than 2017-06-01 |
| 93 |  | Kafka服务功能开发 | 4d | 2017-06-15 | 2017-06-20 |  | start no earlier than 2017-05-26 |
| 94 |  | Kafka服务实例功能开发 | 4d | 2017-06-21 | 2017-06-26 | 93 | start no earlier than 2017-05-26 |
| 95 |  | Kafka服务REST API实现 | 2d | 2017-06-27 | 2017-06-28 | 94 | start no earlier than 2017-05-26 |
| 96 | 3.6 | **Oracle服务及服务实例开发** | 20d | 2017-06-01 | 2017-06-28 |  | start no earlier than 2017-06-01 |
| 97 |  | Oracle服务功能调研 | 4d | 2017-06-01 | 2017-06-06 |  | start no earlier than 2017-05-26 |
| 98 |  | Oracle服务实例功能调研 | 4d | 2017-06-07 | 2017-06-12 | 97 | start no earlier than 2017-05-26 |
| 99 |  | Oracle服务功能开发 | 4d | 2017-06-13 | 2017-06-16 | 98 | start no earlier than 2017-05-26 |
| 100 |  | Oracle服务实例功能开发 | 4d | 2017-06-19 | 2017-06-22 | 99 | start no earlier than 2017-05-26 |
| 101 |  | Oracle服务REST API实现 | 2d | 2017-06-23 | 2017-06-26 | 100 | start no earlier than 2017-05-26 |
| 102 |  | Oracle服务功能集成 | 2d | 2017-06-27 | 2017-06-28 | 101 | start no earlier than 2017-05-26 |
| 103 | 3.7 | **GreenPlum 服务及服务实例开发** | 20d | 2017-06-01 | 2017-06-28 |  | start no earlier than 2017-06-01 |
| 104 |  | GreenPlum服务功能调研 | 4d | 2017-06-01 | 2017-06-06 |  | start no earlier than 2017-05-26 |
| 105 |  | GreenPlum 服务实例功能调研 | 4d | 2017-06-07 | 2017-06-12 | 104 | start no earlier than 2017-05-26 |
| 106 |  | GreenPlum服务功能开发 | 4d | 2017-06-13 | 2017-06-16 | 105 | start no earlier than 2017-05-26 |
| 107 |  | GreenPlum 服务实例功能开发 | 4d | 2017-06-19 | 2017-06-22 | 106 | start no earlier than 2017-05-26 |
| 108 |  | GreenPlum 服务REST API实现 | 2d | 2017-06-23 | 2017-06-26 | 107 | start no earlier than 2017-05-26 |
| 109 |  | GreenPlum服务功能集成 | 2d | 2017-06-27 | 2017-06-28 | 108 | start no earlier than 2017-05-26 |
| 110 | 3.8 | **MongoDB服务及服务实例开发** | 20d | 2017-06-01 | 2017-06-28 |  | start no earlier than 2017-06-01 |
| 111 |  | MongoDB服务功能调研 | 4d | 2017-06-01 | 2017-06-06 |  | start no earlier than 2017-05-26 |
| 112 |  | MongoDB服务实例功能调研 | 4d | 2017-06-07 | 2017-06-12 | 111 | start no earlier than 2017-05-26 |
| 113 |  | MongoDB服务功能开发 | 4d | 2017-06-13 | 2017-06-16 | 112 | start no earlier than 2017-05-26 |
| 114 |  | MongoDB服务实例功能开发 | 4d | 2017-06-19 | 2017-06-22 | 113 | start no earlier than 2017-05-26 |
| 115 |  | MongoDB服务REST API实现 | 2d | 2017-06-23 | 2017-06-26 | 114 | start no earlier than 2017-05-26 |
| 116 |  | MongoDB服务功能集成 | 2d | 2017-06-27 | 2017-06-28 | 115 | start no earlier than 2017-05-26 |
| 117 | 3.9 | **Neo4j服务及服务实例开发** | 20d | 2017-06-01 | 2017-06-28 |  | start no earlier than 2017-06-01 |
| 118 |  | Neo4j服务功能调研 | 4d | 2017-06-01 | 2017-06-06 |  | start no earlier than 2017-05-26 |
| 119 |  | Neo4j服务实例功能调研 | 4d | 2017-06-07 | 2017-06-12 | 118 | start no earlier than 2017-05-26 |
| 120 |  | Neo4j服务功能开发 | 4d | 2017-06-13 | 2017-06-16 | 119 | start no earlier than 2017-05-26 |
| 121 |  | Neo4j服务实例功能开发 | 4d | 2017-06-19 | 2017-06-22 | 120 | start no earlier than 2017-05-26 |
| 122 |  | Neo4j服务REST API实现 | 2d | 2017-06-23 | 2017-06-26 | 121 | start no earlier than 2017-05-26 |
| 123 |  | Neo4j服务功能集成 | 2d | 2017-06-27 | 2017-06-28 | 122 | start no earlier than 2017-05-26 |
| 124 | 3.10 | **RabbitMQ服务及服务实例开发** | 20d | 2017-06-01 | 2017-06-28 |  | start no earlier than 2017-06-01 |
| 125 |  | RabbitMQ服务功能调研 | 4d | 2017-06-01 | 2017-06-06 |  | start no earlier than 2017-05-26 |
| 126 |  | RabbitMQ服务实例功能调研 | 4d | 2017-06-07 | 2017-06-12 | 125 | start no earlier than 2017-05-26 |
| 127 |  | RabbitMQ服务功能开发 | 4d | 2017-06-13 | 2017-06-16 | 126 | start no earlier than 2017-05-26 |
| 128 |  | RabbitMQ服务实例功能开发 | 4d | 2017-06-19 | 2017-06-22 | 127 | start no earlier than 2017-05-26 |
| 129 |  | RabbitMQ服务RSET API实现 | 2d | 2017-06-23 | 2017-06-26 | 128 | start no earlier than 2017-05-26 |
| 130 |  | RabbitMQ服务功能集成 | 2d | 2017-06-27 | 2017-06-28 | 129 | start no earlier than 2017-05-26 |
| 131 | 4 | **与DACP调用接口开发** | 5d | 2017-06-01 | 2017-06-07 |  | start no earlier than 2017-06-01 |
| 132 |  | 与DACP调用接口沟通 | 1d | 2017-06-01 | 2017-06-01 |  | start no earlier than 2017-05-26 |
| 133 |  | DACP接口调用 | 4d | 2017-06-02 | 2017-06-07 | 132 | start no earlier than 2017-05-26 |
| 134 | 5 | **与信云智交互过程开发** | 20d | 2017-06-01 | 2017-06-28 |  | start no earlier than 2017-06-01 |
| 135 | 5.1 | **提供REST API供信云智调用来获取服务列表** | 5d | 2017-06-01 | 2017-06-07 |  | start no earlier than 2017-05-25 |
| 136 |  | REST API接口设计 | 2d | 2017-06-01 | 2017-06-02 |  | start no earlier than 2017-05-26 |
| 137 |  | REST API实现 | 3d | 2017-06-05 | 2017-06-07 | 136 | start no earlier than 2017-05-26 |
| 138 | 5.2 | **提供REST API供信云智创建租户** | 5d | 2017-06-08 | 2017-06-14 | 135 | start no earlier than 2017-05-25 |
| 139 |  | REST API接口设计 | 2d | 2017-06-08 | 2017-06-09 |  | start no earlier than 2017-05-26 |
| 140 |  | REST API实现 | 3d | 2017-06-12 | 2017-06-14 | 139 | start no earlier than 2017-05-26 |

| ID | WBS | Task | Duration | Start | Finish | Predecessors | Constraint |
| --- | --- | --- | --- | --- | --- | --- | --- |
| 141 | 5.3 | **提供REST API供信云智查询租户** | 5d | 2017-06-15 | 2017-06-21 | 138 | start no earlier than 2017-05-26 |
| 142 |  | REST API接口设计 | 2d | 2017-06-15 | 2017-06-16 |  | start no earlier than 2017-05-26 |
| 143 |  | REST API实现 | 3d | 2017-06-19 | 2017-06-21 | 142 | start no earlier than 2017-05-26 |
| 144 | 5.4 | **提供REST API供信云智修改租户** | 5d | 2017-06-22 | 2017-06-28 | 131, 141 | start no earlier than 2017-05-25 |
| 145 |  | REST API接口设计 | 2d | 2017-06-22 | 2017-06-23 |  | start no earlier than 2017-05-26 |
| 146 |  | REST API实现 | 3d | 2017-06-26 | 2017-06-28 | 145 | start no earlier than 2017-05-26 |

## Version 2 (saved 2017-06-07)

Note of the change: update prototype design and plan

Last finish 2017-06-30 → 2017-07-04 (+4d).

Added:

| ID | Task | Duration | Start | Finish | Predecessors | Constraint |
| --- | --- | --- | --- | --- | --- | --- |
| 147 | **需求变更任务** | 20d | 2017-06-07 | 2017-07-04 |  | start no earlier than 2017-06-06 |
| 148 | **中信云访问资源报告页面** | 5d | 2017-06-07 | 2017-06-13 |  | start no earlier than 2017-06-06 |
| 149 | 资源报告页面可定制化，根据服务实例ID来动态展示 | 3d | 2017-06-07 | 2017-06-09 |  | start no earlier than 2017-06-07 |
| 150 | 中信云中嵌入资源报告页面 | 2d | 2017-06-12 | 2017-06-13 | 149 | start no earlier than 2017-06-07 |
| 151 | **用户授权完成发邮件** | 6d | 2017-06-14 | 2017-06-21 | 148 | start no earlier than 2017-06-06 |
| 152 | 配置邮件服务器信息，后台配置 | 1d | 2017-06-14 | 2017-06-14 |  | start no earlier than 2017-06-07 |
| 153 | 发送邮件功能开发，启动一个线程后台运行 | 3d | 2017-06-15 | 2017-06-19 | 152 | start no earlier than 2017-06-07 |
| 154 | 授权完成触发邮件发送 | 2d | 2017-06-20 | 2017-06-21 | 153 | start no earlier than 2017-06-07 |
| 155 | 子公司用户权限控制 | 3d | 2017-06-22 | 2017-06-26 | 151 | start no earlier than 2017-06-06 |
| 156 | 子公司资源报告 | 3d | 2017-06-27 | 2017-06-29 | 155 | start no earlier than 2017-06-07 |
| 157 | 集团资源报告 | 3d | 2017-06-30 | 2017-07-04 | 156 | start no earlier than 2017-06-07 |
| 158 | **其它** | 20d | 2017-06-07 | 2017-07-04 |  | start no earlier than 2017-06-07 |
| 159 | **需求分析** | 4d | 2017-06-07 | 2017-06-12 |  | start no earlier than 2017-06-07 |
| 160 | 客户需求理解，前期准备 | 4d | 2017-06-07 | 2017-06-12 |  | start no earlier than 2017-06-07 |
| 161 | 需求讨论，分析 | 3d | 2017-06-07 | 2017-06-09 |  | start no earlier than 2017-06-07 |
| 162 | **架构设计** | 15d | 2017-06-07 | 2017-06-27 |  | start no earlier than 2017-06-07 |
| 163 | 租户模型设计 | 4d | 2017-06-07 | 2017-06-12 |  | start no earlier than 2017-06-07 |
| 164 | 架构设计 | 4d | 2017-06-07 | 2017-06-12 |  | start no earlier than 2017-06-07 |
| 165 | 前端页面原型开发 | 15d | 2017-06-07 | 2017-06-27 |  | start no earlier than 2017-06-07 |
| 166 | 实现方案论证 | 5d | 2017-06-07 | 2017-06-13 |  | start no earlier than 2017-06-07 |
| 167 | 工作计划编写 | 5d | 2017-06-07 | 2017-06-13 |  | start no earlier than 2017-06-07 |
| 168 | 项目沟通协调 | 20d | 2017-06-07 | 2017-07-04 |  | start no earlier than 2017-06-07 |

Changed:

| ID | Task | Other |
| --- | --- | --- |
| 61 | 四种角色控制框架设计 | was named 三种角色控制框架设计 |

## Version 3 (saved 2017-06-09)

Note of the change: update prototype design, update FS, update scheduler

Last finish 2017-07-04 → 2017-06-30 (-4d).

Added:

| ID | Task | Duration | Start | Finish | Predecessors | Constraint | Resources |
| --- | --- | --- | --- | --- | --- | --- | --- |
| 71 | 租户删除 | 4d | 2017-06-07 | 2017-06-12 |  | start no earlier than 2017-06-07 |  |
| 150 | 用户列表页面 | 5d | 2017-06-07 | 2017-06-13 |  | start no earlier than 2017-06-07 |  |
| 151 | 用户添加 | 4d | 2017-06-14 | 2017-06-19 | 150 | start no earlier than 2017-06-07 |  |
| 172 | Service Broker重构 | 1d | 2017-06-08 | 2017-06-08 |  | start no earlier than 2017-06-08 | 柴宗三 |

Changed:

| ID | Task | Start | Finish | Duration | Complete | Other |
| --- | --- | --- | --- | --- | --- | --- |
| 3 | 调用中信云用户中心登录认证接口 |  |  |  | 0% → 1% |  |
| 7 | **租户管理页面框架开发** |  | 2017-06-14 → 2017-06-12 (-2d) | 10d → 8d |  |  |
| 10 | 初始化一个系统管理员用户 |  | 2017-06-13 → 2017-06-09 (-4d) | 3d → 1d |  | was named 登录页面开发 |
| 11 | 与单点登录服务的集成 | 2017-06-14 → 2017-06-12 (-2d) | 2017-06-14 → 2017-06-12 (-2d) |  |  |  |
| 19 | **租户资源使用情况监控页面开发** |  | 2017-06-30 → 2017-06-29 (-1d) | 15d → 14d |  |  |
| 25 | 租户级的Oracle资源使用信息获取 | 2017-06-22 → 2017-06-21 (-1d) | 2017-06-22 → 2017-06-21 (-1d) | 1d → 0d |  |  |
| 26 | 租户级的GreenPlum 资源使用信息获取 | 2017-06-23 → 2017-06-22 (-1d) | 2017-06-26 → 2017-06-23 (-3d) |  |  |  |
| 27 | 租户级的MongoDB资源使用信息获取 | 2017-06-27 → 2017-06-26 (-1d) | 2017-06-27 → 2017-06-26 (-1d) |  |  |  |
| 28 | 租户级的Neo4j资源使用信息获取 | 2017-06-28 → 2017-06-27 (-1d) | 2017-06-29 → 2017-06-28 (-1d) |  |  |  |
| 29 | 租户级的RabbitMQ资源使用信息获取 | 2017-06-30 → 2017-06-29 (-1d) | 2017-06-30 → 2017-06-29 (-1d) |  |  |  |
| 34 | **租户基本信息页面开发** |  | 2017-06-29 → 2017-06-30 (+1d) | 6d → 7d |  |  |
| 36 | 租户包涵的服务展示 |  | 2017-06-29 → 2017-06-30 (+1d) | 3d → 4d |  |  |
| 37 | **服务管理页面开发** |  | 2017-06-22 → 2017-06-15 (-7d) | 16d → 11d |  |  |
| 46 | Oracle服务添加页面增强 | 2017-06-16 → 2017-06-15 (-1d) | 2017-06-16 → 2017-06-15 (-1d) | 1d → 0d |  |  |
| 47 | GreenPlum服务添加页面增强 | 2017-06-19 → 2017-06-15 (-4d) | 2017-06-19 → 2017-06-15 (-4d) | 1d → 0d |  |  |
| 48 | MongoDB服务添加页面增强 | 2017-06-20 → 2017-06-15 (-5d) | 2017-06-20 → 2017-06-15 (-5d) | 1d → 0d |  |  |
| 49 | Neo4j服务添加页面增强 | 2017-06-21 → 2017-06-15 (-6d) | 2017-06-21 → 2017-06-15 (-6d) | 1d → 0d |  |  |
| 50 | RabbitMQ服务添加页面增强 | 2017-06-22 → 2017-06-15 (-7d) | 2017-06-22 → 2017-06-15 (-7d) | 1d → 0d |  |  |
| 51 | **角色管理页面开发** | 2017-06-23 → 2017-06-16 (-7d) | 2017-06-29 → 2017-06-22 (-7d) |  |  |  |
| 52 | 角色列表页面开发 | 2017-06-23 → 2017-06-16 (-7d) | 2017-06-27 → 2017-06-20 (-7d) |  |  |  |
| 53 | 角色列表获取API调用 | 2017-06-28 → 2017-06-21 (-7d) | 2017-06-29 → 2017-06-22 (-7d) |  |  |  |
| 54 | **服务端开发－橘云多租户管理平台** |  | 2017-06-28 → 2017-06-26 (-2d) | 20d → 18d |  |  |
| 61 | 四种角色控制框架设计 |  |  |  |  | resources 现场研发2 → 现场研发2？ |
| 62 | 系统管理员权限控制功能开发 |  |  |  |  | resources 现场研发2 → 现场研发2？ |
| 63 | 项目管理员权限控制功能开发 |  |  |  |  | resources 现场研发2 → 现场研发2？ |
| 64 | 普通用户权限控制功能开发 |  |  |  |  | resources 现场研发2 → 现场研发2？ |
| 72 | **服务端配置管理，框架开发** | 2017-06-15 → 2017-06-13 (-2d) | 2017-06-28 → 2017-06-26 (-2d) |  |  |  |
| 73 | 服务端Web服务器准备 | 2017-06-15 → 2017-06-13 (-2d) | 2017-06-19 → 2017-06-15 (-4d) |  |  |  |
| 74 | 服务端开发框架准备 | 2017-06-20 → 2017-06-16 (-4d) | 2017-06-23 → 2017-06-21 (-2d) |  |  |  |
| 75 | 服务端代码组织结构设计 | 2017-06-26 → 2017-06-22 (-4d) | 2017-06-28 → 2017-06-26 (-2d) |  |  |  |
| 97 | **Oracle服务及服务实例开发** |  | 2017-06-28 → 2017-06-01 (-27d) | 20d → 0d |  |  |
| 98 | Oracle服务功能调研 |  | 2017-06-06 → 2017-06-01 (-5d) | 4d → 0d |  | resources 现场研发1 → 现场研发1？ |
| 99 | Oracle服务实例功能调研 | 2017-06-07 → 2017-06-01 (-6d) | 2017-06-12 → 2017-06-01 (-11d) | 4d → 0d |  | resources 现场研发1 → 现场研发1？ |
| 100 | Oracle服务功能开发 | 2017-06-13 → 2017-06-01 (-12d) | 2017-06-16 → 2017-06-01 (-15d) | 4d → 0d |  | resources 现场研发1 → 现场研发1？ |
| 101 | Oracle服务实例功能开发 | 2017-06-19 → 2017-06-01 (-18d) | 2017-06-22 → 2017-06-01 (-21d) | 4d → 0d |  | resources 现场研发1 → 现场研发1？ |
| 102 | Oracle服务REST API实现 | 2017-06-23 → 2017-06-01 (-22d) | 2017-06-26 → 2017-06-01 (-25d) | 2d → 0d |  | resources 现场研发1 → 现场研发1？ |
| 103 | Oracle服务功能集成 | 2017-06-27 → 2017-06-01 (-26d) | 2017-06-28 → 2017-06-01 (-27d) | 2d → 0d |  | resources 现场研发1 → 现场研发1？ |
| 105 | GreenPlum服务功能调研 |  |  |  |  | resources 袁伟明 → ？？ |
| 106 | GreenPlum 服务实例功能调研 |  |  |  |  | resources 袁伟明 → ？？ |
| 107 | GreenPlum服务功能开发 |  |  |  |  | resources 袁伟明 → ？？ |
| 108 | GreenPlum 服务实例功能开发 |  |  |  |  | resources 袁伟明 → ？？ |
| 109 | GreenPlum 服务REST API实现 |  |  |  |  | resources 袁伟明 → ？？ |
| 110 | GreenPlum服务功能集成 |  |  |  |  | resources 袁伟明 → ？？ |
| 112 | MongoDB服务功能调研 |  |  |  |  | resources 柴宗三 → ？？ |
| 113 | MongoDB服务实例功能调研 |  |  |  |  | resources 柴宗三 → ？？ |
| 114 | MongoDB服务功能开发 |  |  |  |  | resources 柴宗三 → ？？ |
| 115 | MongoDB服务实例功能开发 |  |  |  |  | resources 柴宗三 → ？？ |
| 116 | MongoDB服务REST API实现 |  |  |  |  | resources 柴宗三 → ？？ |
| 117 | MongoDB服务功能集成 |  |  |  |  | resources 柴宗三 → ？？ |
| 119 | Neo4j服务功能调研 |  |  |  |  | resources 刘旭 → 袁伟明 |
| 120 | Neo4j服务实例功能调研 |  |  |  |  | resources 刘旭 → 袁伟明 |
| 121 | Neo4j服务功能开发 |  |  |  |  | resources 刘旭 → 袁伟明 |
| 122 | Neo4j服务实例功能开发 |  |  |  |  | resources 刘旭 → 袁伟明 |
| 123 | Neo4j服务REST API实现 |  |  |  |  | resources 刘旭 → 袁伟明 |
| 124 | Neo4j服务功能集成 |  |  |  |  | resources 刘旭 → 袁伟明 |
| 126 | RabbitMQ服务功能调研 |  |  |  |  | resources 柴宗三 → 刘旭 |
| 127 | RabbitMQ服务实例功能调研 |  |  |  |  | resources 柴宗三 → 刘旭 |
| 128 | RabbitMQ服务功能开发 |  |  |  |  | resources 柴宗三 → 刘旭 |
| 129 | RabbitMQ服务实例功能开发 |  |  |  |  | resources 柴宗三 → 刘旭 |
| 130 | RabbitMQ服务RSET API实现 |  |  |  |  | resources 柴宗三 → 刘旭 |
| 131 | RabbitMQ服务功能集成 |  |  |  |  | resources 柴宗三 → 刘旭 |
| 133 | 与DACP调用接口沟通 |  |  |  |  | resources 现场研发3 → 现场研发3？ |
| 134 | DACP接口调用 |  |  |  |  | resources 现场研发3 → 现场研发3？ |
| 137 | REST API接口设计 |  |  |  |  | resources 现场研发4 → 现场研发4？ |
| 138 | REST API实现 |  |  |  |  | resources 现场研发4 → 现场研发4？ |
| 140 | REST API接口设计 |  |  |  |  | resources 现场研发4 → 现场研发4？ |
| 141 | REST API实现 |  |  |  |  | resources 现场研发4 → 现场研发4？ |
| 143 | REST API接口设计 |  |  |  |  | resources 现场研发4 → 现场研发4？ |
| 144 | REST API实现 |  |  |  |  | resources 现场研发4 → 现场研发4？ |
| 146 | REST API接口设计 |  |  |  |  | resources 现场研发4 → 现场研发4？ |

| ID | Task | Start | Finish | Duration | Predecessors | Other |
| --- | --- | --- | --- | --- | --- | --- |
| 147 | REST API实现 |  |  |  |  | resources 现场研发4 → 现场研发4？ |
| 148 | **需求变更任务** |  | 2017-07-04 → 2017-06-27 (-7d) | 20d → 15d |  |  |
| 149 | 子公司用户权限控制 | 2017-06-22 → 2017-06-07 (-15d) | 2017-06-26 → 2017-06-09 (-17d) |  | 157 → none | constraint start no earlier than 2017-06-06 → start no earlier than 2017-06-07 |
| 152 | 子公司资源报告 | 2017-06-27 → 2017-06-20 (-7d) | 2017-06-29 → 2017-06-22 (-7d) |  | 149 → 151 |  |
| 153 | 集团资源报告 | 2017-06-30 → 2017-06-23 (-7d) | 2017-07-04 → 2017-06-27 (-7d) |  |  |  |
| 155 | 资源报告页面可定制化，根据服务实例ID来动态展示 |  |  |  |  | resources none → 现场研发1？ |
| 156 | 中信云中嵌入资源报告页面 |  |  |  |  | resources none → 现场研发1？ |
| 158 | 配置邮件服务器信息，后台配置 |  |  |  |  | resources none → 现场研发1？ |
| 159 | 发送邮件功能开发，启动一个线程后台运行 |  |  |  |  | resources none → 现场研发1？ |
| 160 | 授权完成触发邮件发送 |  |  |  |  | resources none → 现场研发1？ |
| 161 | **其它** |  | 2017-07-04 → 2017-06-27 (-7d) | 20d → 15d |  |  |
| 171 | 项目沟通协调 |  | 2017-07-04 → 2017-06-07 (-27d) | 20d → 0d |  |  |

## Version 4 (saved 2017-06-12)

Note of the change: Update scheduler

Last finish 2017-06-30 → 2017-07-03 (+3d).

Added:

| ID | Task | Duration | Start | Finish | Predecessors | Constraint | Resources |
| --- | --- | --- | --- | --- | --- | --- | --- |
| 173 | **资源监控数据收集框架开发** | 16d | 2017-06-11 | 2017-07-03 |  | start no earlier than 2017-06-09 |  |
| 174 | HDFS按实例收集资源使用信息 | 3d | 2017-06-11 | 2017-06-14 |  | start no earlier than 2017-06-09 | 现场研发3？ |
| 175 | YARN按实例收集资源使用信息 | 3d | 2017-06-14 | 2017-06-19 | 174 | start no earlier than 2017-06-09 | 现场研发3？ |
| 176 | HBase按实例收集资源使用信息 | 3d | 2017-06-19 | 2017-06-22 | 175 | start no earlier than 2017-06-09 | 现场研发3？ |
| 177 | HIve按实例收集资源使用信息 | 3d | 2017-06-22 | 2017-06-27 | 176 | start no earlier than 2017-06-09 | 现场研发3？ |
| 178 | Kafka按实例收集资源使用信息 | 3d | 2017-06-27 | 2017-06-30 | 177 | start no earlier than 2017-06-09 | 现场研发3？ |
| 179 | GreenPlum按实例收集资源使用信息 | 8d | 2017-06-11 | 2017-06-21 |  | start no earlier than 2017-06-09 | 现场研发4？ |
| 180 | MongoDB按实例收集资源使用信息 | 8d | 2017-06-21 | 2017-07-03 | 179 | start no earlier than 2017-06-09 | 现场研发4？ |
| 181 | Neo4j按实例收集资源使用信息 | 5d | 2017-06-11 | 2017-06-16 |  | start no earlier than 2017-06-09 | 现场研发5？ |
| 182 | RabbitMQ按实例收集资源使用信息 | 5d | 2017-06-18 | 2017-06-23 | 181 | start no earlier than 2017-06-09 | 现场研发5？ |
| 183 | 按实例获取资源使用信息REST API | 5d | 2017-06-25 | 2017-06-30 | 182 | start no earlier than 2017-06-09 | 现场研发5？ |

Changed:

| ID | Task | Start | Complete | Other |
| --- | --- | --- | --- | --- |
| 1 | **前端开发－橘云多租户管理平台** | 2017-06-01 → 2017-05-31 (-1d) |  | constraint start no earlier than 2017-06-01 → start no earlier than 2017-05-31; baseline start 2017-06-01 → 2017-05-31 |
| 2 | **单点登录功能开发** | 2017-06-01 → 2017-05-31 (-1d) |  | constraint start no earlier than 2017-05-25 → start no earlier than 2017-05-24; baseline start 2017-06-01 → 2017-05-31 |
| 3 | 调用中信云用户中心登录认证接口 | 2017-06-01 → 2017-05-31 (-1d) | 1% → 0% | constraint start no earlier than 2017-05-26 → start no earlier than 2017-05-25 |
| 4 | 信云智控制台跳转到统一管控界面 | 2017-06-05 → 2017-06-04 (-1d) |  | constraint start no earlier than 2017-05-26 → start no earlier than 2017-05-25 |
| 5 | 橘云多租户管理从统一管控平台无密码登录 | 2017-06-06 → 2017-06-05 (-1d) |  | constraint start no earlier than 2017-05-26 → start no earlier than 2017-05-25 |
| 6 | 橘云Ambari运维平台从统一管控页面无密码登录 | 2017-06-08 → 2017-06-07 (-1d) |  | constraint start no earlier than 2017-05-26 → start no earlier than 2017-05-25 |
| 7 | **租户管理页面框架开发** | 2017-06-01 → 2017-05-31 (-1d) |  | constraint start no earlier than 2017-05-25 → start no earlier than 2017-05-24; baseline start 2017-06-01 → 2017-05-31 |
| 8 | 租户管理页面顶级导航栏功能开发 | 2017-06-01 → 2017-05-31 (-1d) |  | constraint start no earlier than 2017-05-26 → start no earlier than 2017-05-25 |
| 9 | 租户管理页面前端开发框架准备 | 2017-06-07 → 2017-06-06 (-1d) |  | constraint start no earlier than 2017-05-26 → start no earlier than 2017-05-25 |
| 10 | 初始化一个系统管理员用户 | 2017-06-09 → 2017-06-08 (-1d) |  | constraint start no earlier than 2017-05-26 → start no earlier than 2017-05-25 |
| 11 | 与单点登录服务的集成 | 2017-06-12 → 2017-06-11 (-1d) |  | constraint start no earlier than 2017-05-26 → start no earlier than 2017-05-25 |
| 12 | **统一管控平台开发** | 2017-06-01 → 2017-05-31 (-1d) |  | constraint start no earlier than 2017-05-25 → start no earlier than 2017-05-24; baseline start 2017-06-01 → 2017-05-31 |
| 13 | 统一管控平台页面设计 | 2017-06-01 → 2017-05-31 (-1d) |  | constraint start no earlier than 2017-05-26 → start no earlier than 2017-05-25 |
| 14 | 统一管控平台页面开发 | 2017-06-06 → 2017-06-05 (-1d) |  | constraint start no earlier than 2017-05-26 → start no earlier than 2017-05-25 |
| 15 | 多租户平台管理页面接入 | 2017-06-12 → 2017-06-11 (-1d) |  | constraint start no earlier than 2017-05-26 → start no earlier than 2017-05-25 |
| 16 | 运维管理平台页面接入 | 2017-06-14 → 2017-06-13 (-1d) |  | constraint start no earlier than 2017-05-26 → start no earlier than 2017-05-25 |
| 17 | 第三方服务运维平台梳理 | 2017-06-15 → 2017-06-14 (-1d) |  | constraint start no earlier than 2017-05-26 → start no earlier than 2017-05-25 |
| 18 | 第三方服务运维平台接入 | 2017-06-19 → 2017-06-18 (-1d) |  | constraint start no earlier than 2017-05-26 → start no earlier than 2017-05-25 |
| 19 | **租户资源使用情况监控页面开发** | 2017-06-12 → 2017-06-11 (-1d) |  | constraint start no earlier than 2017-05-25 → start no earlier than 2017-05-24; baseline start 2017-06-08 → 2017-06-07 |
| 20 | 租户级的HDFS资源使用信息获取 | 2017-06-12 → 2017-06-11 (-1d) |  | constraint start no earlier than 2017-05-26 → start no earlier than 2017-05-25 |
| 21 | 租户级的YARN资源使用信息获取 | 2017-06-14 → 2017-06-13 (-1d) |  | constraint start no earlier than 2017-05-26 → start no earlier than 2017-05-25 |
| 22 | 租户级的Hive资源使用信息获取 | 2017-06-15 → 2017-06-14 (-1d) |  | constraint start no earlier than 2017-05-26 → start no earlier than 2017-05-25 |
| 23 | 租户级的HBase资源使用信息获取 | 2017-06-19 → 2017-06-18 (-1d) |  | constraint start no earlier than 2017-05-26 → start no earlier than 2017-05-25 |
| 24 | 租户级的Kafka资源使用信息获取 | 2017-06-20 → 2017-06-19 (-1d) |  | constraint start no earlier than 2017-05-26 → start no earlier than 2017-05-25 |
| 25 | 租户级的Oracle资源使用信息获取 |  |  | constraint start no earlier than 2017-05-26 → start no earlier than 2017-05-25 |
| 26 | 租户级的GreenPlum 资源使用信息获取 | 2017-06-22 → 2017-06-21 (-1d) |  | constraint start no earlier than 2017-05-26 → start no earlier than 2017-05-25 |
| 27 | 租户级的MongoDB资源使用信息获取 | 2017-06-26 → 2017-06-25 (-1d) |  | constraint start no earlier than 2017-05-26 → start no earlier than 2017-05-25 |
| 28 | 租户级的Neo4j资源使用信息获取 | 2017-06-27 → 2017-06-26 (-1d) |  | constraint start no earlier than 2017-05-26 → start no earlier than 2017-05-25 |
| 29 | 租户级的RabbitMQ资源使用信息获取 | 2017-06-29 → 2017-06-28 (-1d) |  | constraint start no earlier than 2017-05-26 → start no earlier than 2017-05-25 |
| 30 | **租户角色管理，分配页面开发** | 2017-06-01 → 2017-05-31 (-1d) |  | constraint start no earlier than 2017-05-25 → start no earlier than 2017-05-24; baseline start 2017-06-01 → 2017-05-31 |
| 31 | 租户用户列表页面开发 | 2017-06-01 → 2017-05-31 (-1d) |  | constraint start no earlier than 2017-05-26 → start no earlier than 2017-05-25 |
| 32 | 租户授权页面开发 | 2017-06-07 → 2017-06-06 (-1d) |  | constraint start no earlier than 2017-05-26 → start no earlier than 2017-05-25 |
| 33 | 租户授权时获取云用户中心用户列表功能开发 | 2017-06-13 → 2017-06-12 (-1d) |  | constraint start no earlier than 2017-05-26 → start no earlier than 2017-05-25 |
| 34 | **租户基本信息页面开发** | 2017-06-22 → 2017-06-21 (-1d) |  | constraint start no earlier than 2017-05-25 → start no earlier than 2017-05-24; baseline start 2017-06-22 → 2017-06-21 |
| 35 | 租户基本信息展示 | 2017-06-22 → 2017-06-21 (-1d) |  | constraint start no earlier than 2017-05-26 → start no earlier than 2017-05-25 |
| 36 | 租户包涵的服务展示 | 2017-06-27 → 2017-06-26 (-1d) |  | constraint start no earlier than 2017-05-26 → start no earlier than 2017-05-25 |
| 37 | **服务管理页面开发** | 2017-06-01 → 2017-05-31 (-1d) |  | constraint start no earlier than 2017-05-25 → start no earlier than 2017-05-24; baseline start 2017-06-01 → 2017-05-31 |
| 38 | 服务列表页面开发 | 2017-06-01 → 2017-05-31 (-1d) |  | constraint start no earlier than 2017-05-26 → start no earlier than 2017-05-25 |
| 39 | 服务列表页面与后端集成 | 2017-06-07 → 2017-06-06 (-1d) |  | constraint start no earlier than 2017-05-26 → start no earlier than 2017-05-25 |
| 40 | 服务添加页面框架开发 | 2017-06-08 → 2017-06-07 (-1d) |  | constraint start no earlier than 2017-05-26 → start no earlier than 2017-05-25 |
| 41 | HDFS服务添加页面增强 | 2017-06-09 → 2017-06-08 (-1d) |  | constraint start no earlier than 2017-05-26 → start no earlier than 2017-05-25 |
| 42 | YARN服务添加页面增强 | 2017-06-12 → 2017-06-11 (-1d) |  | constraint start no earlier than 2017-05-26 → start no earlier than 2017-05-25 |
| 43 | Hive服务添加页面增强 | 2017-06-13 → 2017-06-12 (-1d) |  | constraint start no earlier than 2017-05-26 → start no earlier than 2017-05-25 |
| 44 | HBase服务添加页面增强 | 2017-06-14 → 2017-06-13 (-1d) |  | constraint start no earlier than 2017-05-26 → start no earlier than 2017-05-25 |
| 45 | Kafka服务添加页面增强 | 2017-06-15 → 2017-06-14 (-1d) |  | constraint start no earlier than 2017-05-26 → start no earlier than 2017-05-25 |
| 46 | Oracle服务添加页面增强 |  |  | constraint start no earlier than 2017-05-26 → start no earlier than 2017-05-25; resources 贾双喜 → none |
| 47 | GreenPlum服务添加页面增强 |  |  | constraint start no earlier than 2017-05-26 → start no earlier than 2017-05-25 |
| 48 | MongoDB服务添加页面增强 |  |  | constraint start no earlier than 2017-05-26 → start no earlier than 2017-05-25 |
| 49 | Neo4j服务添加页面增强 |  |  | constraint start no earlier than 2017-05-26 → start no earlier than 2017-05-25 |
| 50 | RabbitMQ服务添加页面增强 |  |  | constraint start no earlier than 2017-05-26 → start no earlier than 2017-05-25 |
| 51 | **角色管理页面开发** | 2017-06-16 → 2017-06-15 (-1d) |  | constraint start no earlier than 2017-05-25 → start no earlier than 2017-05-24; baseline start 2017-06-22 → 2017-06-21 |
| 52 | 角色列表页面开发 | 2017-06-16 → 2017-06-15 (-1d) |  | constraint start no earlier than 2017-05-26 → start no earlier than 2017-05-25 |
| 53 | 角色列表获取API调用 | 2017-06-21 → 2017-06-20 (-1d) |  | constraint start no earlier than 2017-05-26 → start no earlier than 2017-05-25 |
| 54 | **服务端开发－橘云多租户管理平台** | 2017-06-01 → 2017-05-31 (-1d) |  | constraint start no earlier than 2017-06-01 → start no earlier than 2017-05-31; baseline start 2017-06-01 → 2017-05-31 |
| 55 | **服务管理功能开发** | 2017-06-01 → 2017-05-31 (-1d) |  | constraint start no earlier than 2017-05-25 → start no earlier than 2017-05-24; baseline start 2017-06-01 → 2017-05-31 |
| 56 | 服务和服务实例接口定义 | 2017-06-01 → 2017-05-31 (-1d) |  | constraint start no earlier than 2017-05-26 → start no earlier than 2017-05-25 |
| 57 | 服务和服务实例接口开发 | 2017-06-05 → 2017-06-04 (-1d) |  | constraint start no earlier than 2017-05-26 → start no earlier than 2017-05-25 |
| 58 | 服务管理功能开发 | 2017-06-06 → 2017-06-05 (-1d) |  | constraint start no earlier than 2017-05-26 → start no earlier than 2017-05-25 |
| 59 | 服务实例管理功能开发 | 2017-06-09 → 2017-06-08 (-1d) |  | constraint start no earlier than 2017-05-26 → start no earlier than 2017-05-25 |
| 60 | **权限管理功能开发** | 2017-06-01 → 2017-05-31 (-1d) |  | constraint start no earlier than 2017-05-25 → start no earlier than 2017-05-24; baseline start 2017-06-15 → 2017-06-14 |
| 61 | 四种角色控制框架设计 | 2017-06-01 → 2017-05-31 (-1d) |  | constraint start no earlier than 2017-05-26 → start no earlier than 2017-05-25; resources 现场研发2？ → 虞里杉 |
| 62 | 系统管理员权限控制功能开发 | 2017-06-06 → 2017-06-05 (-1d) |  | constraint start no earlier than 2017-05-26 → start no earlier than 2017-05-25; resources 现场研发2？ → 虞里杉 |
| 63 | 项目管理员权限控制功能开发 | 2017-06-09 → 2017-06-08 (-1d) |  | constraint start no earlier than 2017-05-26 → start no earlier than 2017-05-25; resources 现场研发2？ → 虞里杉 |
| 64 | 普通用户权限控制功能开发 | 2017-06-13 → 2017-06-12 (-1d) |  | constraint start no earlier than 2017-05-26 → start no earlier than 2017-05-25; resources 现场研发2？ → 虞里杉 |
| 65 | **租户管理功能开发** | 2017-06-01 → 2017-05-31 (-1d) |  | constraint start no earlier than 2017-05-25 → start no earlier than 2017-05-24; baseline start 2017-06-01 → 2017-05-31 |
| 66 | 租户接口设计 | 2017-06-01 → 2017-05-31 (-1d) |  | constraint start no earlier than 2017-05-26 → start no earlier than 2017-05-25 |
| 67 | 租户接口实现 | 2017-06-06 → 2017-06-05 (-1d) |  | constraint start no earlier than 2017-05-26 → start no earlier than 2017-05-25 |
| 68 | 租户查询 | 2017-06-09 → 2017-06-08 (-1d) |  | constraint start no earlier than 2017-05-26 → start no earlier than 2017-05-25 |
| 69 | 租户创建 | 2017-06-12 → 2017-06-11 (-1d) |  | constraint start no earlier than 2017-05-26 → start no earlier than 2017-05-25 |
| 70 | 租户修改 | 2017-06-16 → 2017-06-15 (-1d) |  | constraint start no earlier than 2017-05-26 → start no earlier than 2017-05-25 |

| ID | Task | Start | Finish | Other |
| --- | --- | --- | --- | --- |
| 71 | 租户删除 | 2017-06-07 → 2017-06-06 (-1d) |  | constraint start no earlier than 2017-06-07 → start no earlier than 2017-06-06 |
| 72 | **服务端配置管理，框架开发** | 2017-06-13 → 2017-06-12 (-1d) |  | constraint start no earlier than 2017-05-25 → start no earlier than 2017-05-24; baseline start 2017-06-15 → 2017-06-14 |
| 73 | 服务端Web服务器准备 | 2017-06-13 → 2017-06-12 (-1d) |  | constraint start no earlier than 2017-05-26 → start no earlier than 2017-05-25 |
| 74 | 服务端开发框架准备 | 2017-06-16 → 2017-06-15 (-1d) |  | constraint start no earlier than 2017-05-26 → start no earlier than 2017-05-25 |
| 75 | 服务端代码组织结构设计 | 2017-06-22 → 2017-06-21 (-1d) |  | constraint start no earlier than 2017-05-26 → start no earlier than 2017-05-25 |
| 76 | **服务适配器开发** | 2017-06-01 → 2017-05-31 (-1d) |  | baseline start 2017-06-01 → 2017-05-31 |
| 77 | **HDFS服务及服务实例开发** | 2017-06-01 → 2017-05-31 (-1d) |  | constraint start no earlier than 2017-06-01 → start no earlier than 2017-05-31; baseline start 2017-06-01 → 2017-05-31 |
| 78 | HDFS服务功能开发 | 2017-06-01 → 2017-05-31 (-1d) |  | constraint start no earlier than 2017-05-26 → start no earlier than 2017-05-25 |
| 79 | HDFS服务实例功能开发 | 2017-06-07 → 2017-06-06 (-1d) |  | constraint start no earlier than 2017-05-26 → start no earlier than 2017-05-25 |
| 80 | HDFS服务REST API实现 | 2017-06-13 → 2017-06-12 (-1d) |  | constraint start no earlier than 2017-05-26 → start no earlier than 2017-05-25 |
| 81 | **YARN服务及服务实例开发** | 2017-06-15 → 2017-06-14 (-1d) |  | constraint start no earlier than 2017-06-01 → start no earlier than 2017-05-31; baseline start 2017-06-15 → 2017-06-14 |
| 82 | YARN服务功能开发 | 2017-06-15 → 2017-06-14 (-1d) |  | constraint start no earlier than 2017-05-26 → start no earlier than 2017-05-25 |
| 83 | YARN服务实例功能开发 | 2017-06-21 → 2017-06-20 (-1d) |  | constraint start no earlier than 2017-05-26 → start no earlier than 2017-05-25 |
| 84 | YARN服务REST API实现 | 2017-06-27 → 2017-06-26 (-1d) |  | constraint start no earlier than 2017-05-26 → start no earlier than 2017-05-25 |
| 85 | **HBase服务及服务实例开发** | 2017-06-01 → 2017-05-31 (-1d) |  | constraint start no earlier than 2017-06-01 → start no earlier than 2017-05-31; baseline start 2017-06-01 → 2017-05-31 |
| 86 | HBase服务功能开发 | 2017-06-01 → 2017-05-31 (-1d) |  | constraint start no earlier than 2017-05-26 → start no earlier than 2017-05-25 |
| 87 | HBase服务实例功能开发 | 2017-06-07 → 2017-06-06 (-1d) |  | constraint start no earlier than 2017-05-26 → start no earlier than 2017-05-25 |
| 88 | HBase服务REST API开发 | 2017-06-13 → 2017-06-12 (-1d) |  | constraint start no earlier than 2017-05-26 → start no earlier than 2017-05-25 |
| 89 | **Hive服务及服务实例开发** | 2017-06-15 → 2017-06-14 (-1d) |  | constraint start no earlier than 2017-06-01 → start no earlier than 2017-05-31; baseline start 2017-06-15 → 2017-06-14 |
| 90 | Hive服务功能开发 | 2017-06-15 → 2017-06-14 (-1d) |  | constraint start no earlier than 2017-05-26 → start no earlier than 2017-05-25 |
| 91 | Hive服务实例功能开发 | 2017-06-21 → 2017-06-20 (-1d) |  | constraint start no earlier than 2017-05-26 → start no earlier than 2017-05-25 |
| 92 | Hive服务REST API实现 | 2017-06-27 → 2017-06-26 (-1d) |  | constraint start no earlier than 2017-05-26 → start no earlier than 2017-05-25 |
| 93 | **Kafka服务及服务实例开发** | 2017-06-15 → 2017-06-14 (-1d) |  | constraint start no earlier than 2017-06-01 → start no earlier than 2017-05-31; baseline start 2017-06-15 → 2017-06-14 |
| 94 | Kafka服务功能开发 | 2017-06-15 → 2017-06-14 (-1d) |  | constraint start no earlier than 2017-05-26 → start no earlier than 2017-05-25 |
| 95 | Kafka服务实例功能开发 | 2017-06-21 → 2017-06-20 (-1d) |  | constraint start no earlier than 2017-05-26 → start no earlier than 2017-05-25 |
| 96 | Kafka服务REST API实现 | 2017-06-27 → 2017-06-26 (-1d) |  | constraint start no earlier than 2017-05-26 → start no earlier than 2017-05-25 |
| 97 | **Oracle服务及服务实例开发** | 2017-06-01 → 2017-05-31 (-1d) | 2017-06-01 → 2017-05-31 (-1d) | constraint start no earlier than 2017-06-01 → start no earlier than 2017-05-31; baseline start 2017-06-01 → 2017-05-31 |
| 98 | Oracle服务功能调研 | 2017-06-01 → 2017-05-31 (-1d) | 2017-06-01 → 2017-05-31 (-1d) | constraint start no earlier than 2017-05-26 → start no earlier than 2017-05-25; resources 现场研发1？ → none |
| 99 | Oracle服务实例功能调研 | 2017-06-01 → 2017-05-31 (-1d) | 2017-06-01 → 2017-05-31 (-1d) | constraint start no earlier than 2017-05-26 → start no earlier than 2017-05-25; resources 现场研发1？ → none |
| 100 | Oracle服务功能开发 | 2017-06-01 → 2017-05-31 (-1d) | 2017-06-01 → 2017-05-31 (-1d) | constraint start no earlier than 2017-05-26 → start no earlier than 2017-05-25; resources 现场研发1？ → none |
| 101 | Oracle服务实例功能开发 | 2017-06-01 → 2017-05-31 (-1d) | 2017-06-01 → 2017-05-31 (-1d) | constraint start no earlier than 2017-05-26 → start no earlier than 2017-05-25; resources 现场研发1？ → none |
| 102 | Oracle服务REST API实现 | 2017-06-01 → 2017-05-31 (-1d) | 2017-06-01 → 2017-05-31 (-1d) | constraint start no earlier than 2017-05-26 → start no earlier than 2017-05-25; resources 现场研发1？ → none |
| 103 | Oracle服务功能集成 | 2017-06-01 → 2017-05-31 (-1d) | 2017-06-01 → 2017-05-31 (-1d) | constraint start no earlier than 2017-05-26 → start no earlier than 2017-05-25; resources 现场研发1？ → none |
| 104 | **GreenPlum 服务及服务实例开发** | 2017-06-01 → 2017-05-31 (-1d) |  | constraint start no earlier than 2017-06-01 → start no earlier than 2017-05-31; baseline start 2017-06-01 → 2017-05-31 |
| 105 | GreenPlum服务功能调研 | 2017-06-01 → 2017-05-31 (-1d) |  | constraint start no earlier than 2017-05-26 → start no earlier than 2017-05-25 |
| 106 | GreenPlum 服务实例功能调研 | 2017-06-07 → 2017-06-06 (-1d) |  | constraint start no earlier than 2017-05-26 → start no earlier than 2017-05-25 |
| 107 | GreenPlum服务功能开发 | 2017-06-13 → 2017-06-12 (-1d) |  | constraint start no earlier than 2017-05-26 → start no earlier than 2017-05-25 |
| 108 | GreenPlum 服务实例功能开发 | 2017-06-19 → 2017-06-18 (-1d) |  | constraint start no earlier than 2017-05-26 → start no earlier than 2017-05-25 |
| 109 | GreenPlum 服务REST API实现 | 2017-06-23 → 2017-06-22 (-1d) |  | constraint start no earlier than 2017-05-26 → start no earlier than 2017-05-25 |
| 110 | GreenPlum服务功能集成 | 2017-06-27 → 2017-06-26 (-1d) |  | constraint start no earlier than 2017-05-26 → start no earlier than 2017-05-25 |
| 111 | **MongoDB服务及服务实例开发** | 2017-06-01 → 2017-05-31 (-1d) |  | constraint start no earlier than 2017-06-01 → start no earlier than 2017-05-31; baseline start 2017-06-01 → 2017-05-31 |
| 112 | MongoDB服务功能调研 | 2017-06-01 → 2017-05-31 (-1d) |  | constraint start no earlier than 2017-05-26 → start no earlier than 2017-05-25 |
| 113 | MongoDB服务实例功能调研 | 2017-06-07 → 2017-06-06 (-1d) |  | constraint start no earlier than 2017-05-26 → start no earlier than 2017-05-25 |
| 114 | MongoDB服务功能开发 | 2017-06-13 → 2017-06-12 (-1d) |  | constraint start no earlier than 2017-05-26 → start no earlier than 2017-05-25 |
| 115 | MongoDB服务实例功能开发 | 2017-06-19 → 2017-06-18 (-1d) |  | constraint start no earlier than 2017-05-26 → start no earlier than 2017-05-25 |
| 116 | MongoDB服务REST API实现 | 2017-06-23 → 2017-06-22 (-1d) |  | constraint start no earlier than 2017-05-26 → start no earlier than 2017-05-25 |
| 117 | MongoDB服务功能集成 | 2017-06-27 → 2017-06-26 (-1d) |  | constraint start no earlier than 2017-05-26 → start no earlier than 2017-05-25 |
| 118 | **Neo4j服务及服务实例开发** | 2017-06-01 → 2017-05-31 (-1d) |  | constraint start no earlier than 2017-06-01 → start no earlier than 2017-05-31; baseline start 2017-06-01 → 2017-05-31 |
| 119 | Neo4j服务功能调研 | 2017-06-01 → 2017-05-31 (-1d) |  | constraint start no earlier than 2017-05-26 → start no earlier than 2017-05-25 |
| 120 | Neo4j服务实例功能调研 | 2017-06-07 → 2017-06-06 (-1d) |  | constraint start no earlier than 2017-05-26 → start no earlier than 2017-05-25 |
| 121 | Neo4j服务功能开发 | 2017-06-13 → 2017-06-12 (-1d) |  | constraint start no earlier than 2017-05-26 → start no earlier than 2017-05-25 |
| 122 | Neo4j服务实例功能开发 | 2017-06-19 → 2017-06-18 (-1d) |  | constraint start no earlier than 2017-05-26 → start no earlier than 2017-05-25 |
| 123 | Neo4j服务REST API实现 | 2017-06-23 → 2017-06-22 (-1d) |  | constraint start no earlier than 2017-05-26 → start no earlier than 2017-05-25 |
| 124 | Neo4j服务功能集成 | 2017-06-27 → 2017-06-26 (-1d) |  | constraint start no earlier than 2017-05-26 → start no earlier than 2017-05-25 |
| 125 | **RabbitMQ服务及服务实例开发** | 2017-06-01 → 2017-05-31 (-1d) |  | constraint start no earlier than 2017-06-01 → start no earlier than 2017-05-31; baseline start 2017-06-01 → 2017-05-31 |
| 126 | RabbitMQ服务功能调研 | 2017-06-01 → 2017-05-31 (-1d) |  | constraint start no earlier than 2017-05-26 → start no earlier than 2017-05-25 |
| 127 | RabbitMQ服务实例功能调研 | 2017-06-07 → 2017-06-06 (-1d) |  | constraint start no earlier than 2017-05-26 → start no earlier than 2017-05-25 |
| 128 | RabbitMQ服务功能开发 | 2017-06-13 → 2017-06-12 (-1d) |  | constraint start no earlier than 2017-05-26 → start no earlier than 2017-05-25 |
| 129 | RabbitMQ服务实例功能开发 | 2017-06-19 → 2017-06-18 (-1d) |  | constraint start no earlier than 2017-05-26 → start no earlier than 2017-05-25 |
| 130 | RabbitMQ服务RSET API实现 | 2017-06-23 → 2017-06-22 (-1d) |  | constraint start no earlier than 2017-05-26 → start no earlier than 2017-05-25 |
| 131 | RabbitMQ服务功能集成 | 2017-06-27 → 2017-06-26 (-1d) |  | constraint start no earlier than 2017-05-26 → start no earlier than 2017-05-25 |
| 132 | **与DACP调用接口开发** | 2017-06-01 → 2017-05-31 (-1d) |  | constraint start no earlier than 2017-06-01 → start no earlier than 2017-05-31; baseline start 2017-06-01 → 2017-05-31 |
| 133 | 与DACP调用接口沟通 | 2017-06-01 → 2017-05-31 (-1d) |  | constraint start no earlier than 2017-05-26 → start no earlier than 2017-05-25; resources 现场研发3？ → 现场研发2？ |
| 134 | DACP接口调用 | 2017-06-02 → 2017-06-01 (-1d) |  | constraint start no earlier than 2017-05-26 → start no earlier than 2017-05-25; resources 现场研发3？ → 现场研发2？ |
| 135 | **与信云智交互过程开发** | 2017-06-01 → 2017-05-31 (-1d) |  | constraint start no earlier than 2017-06-01 → start no earlier than 2017-05-31; baseline start 2017-06-01 → 2017-05-31 |
| 136 | **提供REST API供信云智调用来获取服务列表** | 2017-06-01 → 2017-05-31 (-1d) |  | constraint start no earlier than 2017-05-25 → start no earlier than 2017-05-24; baseline start 2017-06-01 → 2017-05-31 |
| 137 | REST API接口设计 | 2017-06-01 → 2017-05-31 (-1d) |  | constraint start no earlier than 2017-05-26 → start no earlier than 2017-05-25; resources 现场研发4？ → 赵一鸣 |
| 138 | REST API实现 | 2017-06-05 → 2017-06-04 (-1d) |  | constraint start no earlier than 2017-05-26 → start no earlier than 2017-05-25; resources 现场研发4？ → 赵一鸣 |
| 139 | **提供REST API供信云智创建租户** | 2017-06-08 → 2017-06-07 (-1d) |  | constraint start no earlier than 2017-05-25 → start no earlier than 2017-05-24; baseline start 2017-06-08 → 2017-06-07 |
| 140 | REST API接口设计 | 2017-06-08 → 2017-06-07 (-1d) |  | constraint start no earlier than 2017-05-26 → start no earlier than 2017-05-25; resources 现场研发4？ → 赵一鸣 |

| ID | Task | Start | Finish | Duration | Other |
| --- | --- | --- | --- | --- | --- |
| 141 | REST API实现 | 2017-06-12 → 2017-06-11 (-1d) |  |  | constraint start no earlier than 2017-05-26 → start no earlier than 2017-05-25; resources 现场研发4？ → 赵一鸣 |
| 142 | **提供REST API供信云智查询租户** | 2017-06-15 → 2017-06-14 (-1d) |  |  | constraint start no earlier than 2017-05-26 → start no earlier than 2017-05-25 |
| 143 | REST API接口设计 | 2017-06-15 → 2017-06-14 (-1d) |  |  | constraint start no earlier than 2017-05-26 → start no earlier than 2017-05-25; resources 现场研发4？ → 赵一鸣 |
| 144 | REST API实现 | 2017-06-19 → 2017-06-18 (-1d) |  |  | constraint start no earlier than 2017-05-26 → start no earlier than 2017-05-25; resources 现场研发4？ → 赵一鸣 |
| 145 | **提供REST API供信云智修改租户** | 2017-06-22 → 2017-06-21 (-1d) |  |  | constraint start no earlier than 2017-05-25 → start no earlier than 2017-05-24; baseline start 2017-06-08 → 2017-06-07 |
| 146 | REST API接口设计 | 2017-06-22 → 2017-06-21 (-1d) |  |  | constraint start no earlier than 2017-05-26 → start no earlier than 2017-05-25; resources 现场研发4？ → 赵一鸣 |
| 147 | REST API实现 | 2017-06-26 → 2017-06-25 (-1d) |  |  | constraint start no earlier than 2017-05-26 → start no earlier than 2017-05-25; resources 现场研发4？ → 赵一鸣 |
| 148 | **需求变更任务** | 2017-06-07 → 2017-06-06 (-1d) |  |  | constraint start no earlier than 2017-06-06 → start no earlier than 2017-06-05 |
| 149 | 子公司用户权限控制 | 2017-06-07 → 2017-06-06 (-1d) |  |  | constraint start no earlier than 2017-06-07 → start no earlier than 2017-06-06 |
| 150 | 用户列表页面 | 2017-06-07 → 2017-06-06 (-1d) |  |  | constraint start no earlier than 2017-06-07 → start no earlier than 2017-06-06 |
| 151 | 用户添加 | 2017-06-14 → 2017-06-13 (-1d) |  |  | constraint start no earlier than 2017-06-07 → start no earlier than 2017-06-06 |
| 152 | 子公司资源报告 | 2017-06-20 → 2017-06-19 (-1d) |  |  | constraint start no earlier than 2017-06-07 → start no earlier than 2017-06-06 |
| 153 | 集团资源报告 | 2017-06-23 → 2017-06-22 (-1d) |  |  | constraint start no earlier than 2017-06-07 → start no earlier than 2017-06-06 |
| 154 | **中信云访问资源报告页面** | 2017-06-07 → 2017-06-06 (-1d) | 2017-06-13 → 2017-06-06 (-7d) | 5d → 0d | constraint start no earlier than 2017-06-06 → start no earlier than 2017-06-05 |
| 155 | 资源报告页面可定制化，根据服务实例ID来动态展示 | 2017-06-07 → 2017-06-06 (-1d) | 2017-06-09 → 2017-06-06 (-3d) | 3d → 0d | constraint start no earlier than 2017-06-07 → start no earlier than 2017-06-06; resources 现场研发1？ → none |
| 156 | 中信云中嵌入资源报告页面 | 2017-06-12 → 2017-06-06 (-6d) | 2017-06-13 → 2017-06-06 (-7d) | 2d → 0d | constraint start no earlier than 2017-06-07 → start no earlier than 2017-06-06; resources 现场研发1？ → none |
| 157 | **用户授权完成发邮件** | 2017-06-14 → 2017-06-06 (-8d) | 2017-06-21 → 2017-06-14 (-7d) |  | constraint start no earlier than 2017-06-06 → start no earlier than 2017-06-05 |
| 158 | 配置邮件服务器信息，后台配置 | 2017-06-14 → 2017-06-06 (-8d) | 2017-06-14 → 2017-06-07 (-7d) |  | constraint start no earlier than 2017-06-07 → start no earlier than 2017-06-06 |
| 159 | 发送邮件功能开发，启动一个线程后台运行 | 2017-06-15 → 2017-06-07 (-8d) | 2017-06-19 → 2017-06-12 (-7d) |  | constraint start no earlier than 2017-06-07 → start no earlier than 2017-06-06 |
| 160 | 授权完成触发邮件发送 | 2017-06-20 → 2017-06-12 (-8d) | 2017-06-21 → 2017-06-14 (-7d) |  | constraint start no earlier than 2017-06-07 → start no earlier than 2017-06-06 |
| 161 | **其它** | 2017-06-07 → 2017-06-06 (-1d) |  |  | constraint start no earlier than 2017-06-07 → start no earlier than 2017-06-06 |
| 162 | **需求分析** | 2017-06-07 → 2017-06-06 (-1d) |  |  | constraint start no earlier than 2017-06-07 → start no earlier than 2017-06-06 |
| 163 | 客户需求理解，前期准备 | 2017-06-07 → 2017-06-06 (-1d) |  |  | constraint start no earlier than 2017-06-07 → start no earlier than 2017-06-06; resources none → 王栋 |
| 164 | 需求讨论，分析 | 2017-06-07 → 2017-06-06 (-1d) |  |  | constraint start no earlier than 2017-06-07 → start no earlier than 2017-06-06; resources none → 王栋 |
| 165 | **架构设计** | 2017-06-07 → 2017-06-06 (-1d) |  |  | constraint start no earlier than 2017-06-07 → start no earlier than 2017-06-06 |
| 166 | 租户模型设计 | 2017-06-07 → 2017-06-06 (-1d) |  |  | constraint start no earlier than 2017-06-07 → start no earlier than 2017-06-06; resources none → 王栋 |
| 167 | 架构设计 | 2017-06-07 → 2017-06-06 (-1d) |  |  | constraint start no earlier than 2017-06-07 → start no earlier than 2017-06-06; resources none → 王栋 |
| 168 | 前端页面原型开发 | 2017-06-07 → 2017-06-06 (-1d) |  |  | constraint start no earlier than 2017-06-07 → start no earlier than 2017-06-06; resources none → 王栋 |
| 169 | 实现方案论证 | 2017-06-07 → 2017-06-06 (-1d) |  |  | constraint start no earlier than 2017-06-07 → start no earlier than 2017-06-06; resources none → 王栋 |
| 170 | 工作计划编写 | 2017-06-07 → 2017-06-06 (-1d) |  |  | constraint start no earlier than 2017-06-07 → start no earlier than 2017-06-06; resources none → 王栋 |
| 171 | 项目沟通协调 | 2017-06-07 → 2017-06-06 (-1d) | 2017-06-07 → 2017-06-06 (-1d) |  | constraint start no earlier than 2017-06-07 → start no earlier than 2017-06-06; resources none → 王栋 |
| 172 | Service Broker重构 | 2017-06-08 → 2017-06-07 (-1d) | 2017-06-08 → 2017-06-28 (+20d) | 1d → 15d | constraint start no earlier than 2017-06-08 → start no earlier than 2017-06-07 |

## Version 5 (saved 2017-06-12)

Note of the change: Update scheduler, identify the BIU developers' tasks. Set Zongsan as the MongoDB service broker enhancement owner.

Last finish stays 2017-07-03.

Changed:

| ID | Task | Other |
| --- | --- | --- |
| 112 | MongoDB服务功能调研 | resources ？？ → 柴宗三 |
| 113 | MongoDB服务实例功能调研 | resources ？？ → 柴宗三 |
| 114 | MongoDB服务功能开发 | resources ？？ → 柴宗三 |
| 115 | MongoDB服务实例功能开发 | resources ？？ → 柴宗三 |
| 116 | MongoDB服务REST API实现 | resources ？？ → 柴宗三 |
| 117 | MongoDB服务功能集成 | resources ？？ → 柴宗三 |
| 133 | 与DACP调用接口沟通 | resources 现场研发2？ → 于晶 |
| 134 | DACP接口调用 | resources 现场研发2？ → 于晶 |
| 158 | 配置邮件服务器信息，后台配置 | resources 现场研发1？ → 罗丹丹 |
| 159 | 发送邮件功能开发，启动一个线程后台运行 | resources 现场研发1？ → 罗丹丹 |
| 160 | 授权完成触发邮件发送 | resources 现场研发1？ → 罗丹丹 |
| 174 | HDFS按实例收集资源使用信息 | resources 现场研发3？ → 张富强 |
| 175 | YARN按实例收集资源使用信息 | resources 现场研发3？ → 张富强 |
| 176 | HBase按实例收集资源使用信息 | resources 现场研发3？ → 张富强 |
| 177 | HIve按实例收集资源使用信息 | resources 现场研发3？ → 赵星云 |
| 178 | Kafka按实例收集资源使用信息 | resources 现场研发3？ → 闫林生 |
| 179 | GreenPlum按实例收集资源使用信息 | resources 现场研发4？ → 闫林生 |
| 180 | MongoDB按实例收集资源使用信息 | resources 现场研发4？ → 闫林生 |
| 181 | Neo4j按实例收集资源使用信息 | resources 现场研发5？ → 赵星云 |
| 182 | RabbitMQ按实例收集资源使用信息 | resources 现场研发5？ → 赵星云 |
| 183 | 按实例获取资源使用信息REST API | resources 现场研发5？ → 赵星云 |

## Version 6 (saved 2017-06-13)

Note of the change: update scheduler, assign ZongSan as the MongoDB Service Broker server an WeiMing as the GreenPlum Service Broker owner.

Last finish stays 2017-07-03.

Changed:

| ID | Task | Other |
| --- | --- | --- |
| 105 | GreenPlum服务功能调研 | resources ？？ → 袁伟明 |
| 106 | GreenPlum 服务实例功能调研 | resources ？？ → 袁伟明 |
| 107 | GreenPlum服务功能开发 | resources ？？ → 袁伟明 |
| 108 | GreenPlum 服务实例功能开发 | resources ？？ → 袁伟明 |
| 109 | GreenPlum 服务REST API实现 | resources ？？ → 袁伟明 |
| 110 | GreenPlum服务功能集成 | resources ？？ → 袁伟明 |
